# IST645F18A2BKulkarniS_1

Schedule from MS Project, 2018-09-11 to 2019-07-10, 5 hours a day, costs in $.

## Calendars

- Standard: Mon-Fri 08:00-12:00, 13:00-17:00; Sat-Sun off. Exceptions (off unless hours are given): 2018-11-18 08:00-12:00, 13:00-17:00, 2018-11-22 (Thanksgiving, recurring), 2018-12-15 08:00-12:00, 13:00-17:00, 2018-12-25 (Christmas, recurring), 2019-05-27 (Memorial day, recurring).

## Resources

| Resource | Rate |
| --- | --- |
| Angela R. Berry |  |
| Apurv Khanna |  |
| Thomas V. Dugas |  |
| Cynthia Wong |  |
| Piro Hernandez |  |
| Javier Pareja |  |
| Susan Levy |  |
| Nikki Platenik |  |
| Sudhanshu Kulkarni | 61 |
| Robert T. Murray | 45 |
| Karen Watson | 37.5 |
| Stephanie Lewis | 40 |
| James Sanduzi | 56 |
| Phillip Grome | 62.5 |
| Mary Garcia | 59 |
| Initial Payment | 17500 |
| Monthly license fees | 2300 |
| Integration test fees per module | 12500 |
| Training sessions | 17000 |
| Simulation test | 32500 |

## Schedule

| ID | WBS | Task | Type | Duration | Start | Finish | Predecessors | Total slack | Free slack | Constraint | Resources | Work | Cost |
| --- | --- | --- | --- | --- | --- | --- | --- | --- | --- | --- | --- | --- | --- |
| 1 | 1 | **Initiation of the Project** |  | 70.05d | 2018-09-11 10:00 | 2018-11-12 08:15 |  | 274.98d |  |  |  | 52h | 1,970.98 |
| 2 | 1.1 | Explain the project plan and important modules to the stakeholders and sponsors |  | 0.17d | 2018-09-11 10:00 | 2018-09-11 10:50 |  | 319.05d | 0d |  | Javier Pareja; Piro Hernandez; Sudhanshu Kulkarni; Susan Levy; Angela R. Berry; Apurv Khanna | 5h | 50.83 |
| 3 | 1.2 | Submit work request form | milestone | 1d | 2018-09-11 10:50 | 2018-09-11 16:50 | 2 | 319.05d | 0d |  | Sudhanshu Kulkarni [40%] | 2h | 122 |
| 4 | 1.3 | **Kick off meeting** |  | 0.54d | 2018-09-11 16:50 | 2018-09-12 10:33 |  | 341.47d |  |  |  | 19h | 318.13 |
| 5 | 1.3.1 | **Kick off meeting with the stakeholders and sponsors** |  | 0.35d | 2018-09-11 16:50 | 2018-09-12 09:35 |  | 341.47d |  |  |  | 10h | 72.17 |
| 6 | 1.3.1.1 | Gather stakeholders and sponsor perspectives |  | 0.11d | 2018-09-11 16:50 | 2018-09-12 08:23 | 3 | 319.05d | 0d |  | Javier Pareja [60%]; Piro Hernandez [60%]; Sudhanshu Kulkarni [60%]; Susan Levy [60%]; Nikki Platenik; Angela R. Berry; Apurv Khanna | 3h | 20.34 |
| 7 | 1.3.1.2 | Define business value and strategy allignment |  | 0.11d | 2018-09-12 08:23 | 2018-09-12 08:56 | 6 | 319.05d | 0d |  | Javier Pareja [60%]; Piro Hernandez [60%]; Sudhanshu Kulkarni [60%]; Susan Levy [60%]; Nikki Platenik; Angela R. Berry; Apurv Khanna | 3h | 20.34 |
| 8 | 1.3.1.3 | Define scope and requirements |  | 0.13d | 2018-09-12 08:56 | 2018-09-12 09:35 | 7 | 319.05d | 0d |  | Javier Pareja [80%]; Piro Hernandez [80%]; Sudhanshu Kulkarni [80%]; Susan Levy [80%]; Nikki Platenik; Angela R. Berry; Apurv Khanna | 4h | 31.49 |
| 9 | 1.3.2 | **Kick off meeting with World Hotels and Blue Prism Inc.** |  | 0.19d | 2018-09-12 09:35 | 2018-09-12 10:33 |  | 341.47d |  |  |  | 9h | 245.96 |
| 10 | 1.3.2.1 | Introduce teams and define roles and responsibilities with the team |  | 0.07d | 2018-09-12 09:35 | 2018-09-12 09:56 | 8 | 321.01d |  |  | Angela R. Berry [40%]; Apurv Khanna [40%]; Cynthia Wong [40%]; James Sanduzi [40%]; Javier Pareja [40%]; Karen Watson [40%]; Mary Garcia [40%]; Phillip Grome [40%]; Piro Hernandez [40%]; Robert T. Murray [40%]; Stephanie Lewis [40%]; Sudhanshu Kulkarni [40%]; Susan Levy [40%]; Thomas V. Dugas [40%] | 2h | 51.57 |
| 11 | 1.3.2.2 | Explain scope and requirements |  | 0.19d | 2018-09-12 09:35 | 2018-09-12 10:33 | 8 | 320.89d |  |  | Angela R. Berry [40%]; Apurv Khanna [40%]; Cynthia Wong [40%]; James Sanduzi [40%]; Javier Pareja [40%]; Karen Watson [40%]; Mary Garcia [40%]; Phillip Grome [40%]; Piro Hernandez [40%]; Robert T. Murray [40%]; Stephanie Lewis [40%]; Sudhanshu Kulkarni [40%]; Susan Levy [40%] | 5h | 138.85 |
| 12 | 1.3.2.3 | Define team commitments |  | 0.04d | 2018-09-12 09:35 | 2018-09-12 09:46 | 8 | 321.05d |  |  | Angela R. Berry [40%]; Apurv Khanna [40%]; Cynthia Wong [40%]; James Sanduzi [40%]; Javier Pareja [40%]; Karen Watson [40%]; Mary Garcia [40%]; Phillip Grome [40%]; Piro Hernandez [40%]; Robert T. Murray [40%]; Stephanie Lewis [40%]; Sudhanshu Kulkarni [40%]; Susan Levy [40%] | 1h | 27.77 |
| 13 | 1.3.2.4 | Set the right expectations |  | 0.04d | 2018-09-12 09:35 | 2018-09-12 09:46 | 8 | 319.05d | 0d |  | Angela R. Berry [40%]; Apurv Khanna [40%]; Cynthia Wong [40%]; James Sanduzi [40%]; Javier Pareja [40%]; Karen Watson [40%]; Mary Garcia [40%]; Phillip Grome [40%]; Piro Hernandez [40%]; Robert T. Murray [40%]; Stephanie Lewis [40%]; Sudhanshu Kulkarni [40%]; Susan Levy [40%] | 1h | 27.77 |
| 14 | 1.4 | **Develop Documentation** |  | 68.44d | 2018-09-12 09:46 | 2018-11-11 15:00 |  | 275.03d |  |  |  | 19h | 1,157.5 |
| 15 | 1.4.1 | Draft a project charter |  | 2d | 2018-09-12 09:46 | 2018-09-13 11:46 | 13 | 319.05d |  |  | Sudhanshu Kulkarni | 10h | 610 |
| 16 | 1.4.2 | Draft a Statement of Work (SoW) |  | 0.6d | 2018-09-12 09:46 | 2018-09-12 13:46 | 13 | 320.45d |  |  | Phillip Grome | 3h | 187.5 |
| 17 | 1.4.3 | Draft a requirement specification document |  | 0.6d | 2018-09-12 09:46 | 2018-09-12 13:46 | 13 | 320.45d |  |  | Mary Garcia | 3h | 177 |
| 18 | 1.4.4 | Develop an Executive Project Overview deck |  | 1d | 2018-11-09 11:00 | 2018-11-11 15:00 | 13 | 274.98d | 0d | finish no earlier than 2018-11-11 15:00 | Sudhanshu Kulkarni [60%] | 3h | 183 |
| 19 | 1.5 | **Documentation sign-off** |  | 1.25d | 2018-11-09 10:00 | 2018-11-12 08:15 |  | 265.54d |  |  |  | 2h | 18.36 |
| 20 | 1.5.1 | Present documents to stakeholders | milestone | 0.05d | 2018-11-12 08:00 | 2018-11-12 08:15 | 18 | 252.55d |  |  | Javier Pareja [20%]; Piro Hernandez [20%]; Sudhanshu Kulkarni [20%]; Susan Levy [20%]; Nikki Platenik; Angela R. Berry; Apurv Khanna | 1h | 3.21 |
| 21 | 1.5.2 | Present the Executive Project overview to various project members | milestone | 0.14d | 2018-11-09 10:00 | 2018-11-09 10:42 |  | 243.11d | 0d | start no earlier than 2018-11-09 10:00 | Angela R. Berry [20%]; Apurv Khanna [20%]; Javier Pareja [20%]; Nikki Platenik [20%]; Robert T. Murray [20%]; Sudhanshu Kulkarni [20%]; Susan Levy [20%] | 1h | 15.14 |
| 22 | 1.6 | **Document Revision** |  | 0.33d | 2018-11-09 10:42 | 2018-11-09 13:22 |  | 265.54d |  |  |  | 5h | 304.17 |
| 23 | 1.6.1 | Revise all the necessary documents as per the project demands |  | 0.33d | 2018-11-09 10:42 | 2018-11-09 13:22 | 21 | 243.11d | 0d |  | Mary Garcia; Sudhanshu Kulkarni; Phillip Grome | 5h | 304.17 |
| 24 | 2 | **Planning of the Project** |  | 10.22d | 2018-11-09 13:22 | 2018-11-18 16:27 |  | 74.02d |  |  |  | 110h | 4,148.4 |
| 25 | 2.1 | **Develop a Cost and Efforts Plan** |  | 2.33d | 2018-11-09 13:22 | 2018-11-13 08:02 |  | 265.54d |  |  |  | 8h | 448.5 |
| 26 | 2.1.1 | Estimate the effort required for each module |  | 0.33d | 2018-11-09 13:22 | 2018-11-09 15:02 | 23 | 265.54d | 0d |  | Karen Watson [60%]; Robert T. Murray [60%]; Sudhanshu Kulkarni [60%] | 3h | 143.5 |
| 27 | 2.1.2 | Identify the resources who will be working on the tasks along with their availibility |  | 1d | 2018-11-09 15:02 | 2018-11-12 11:02 | 26 | 265.54d | 0d |  | Sudhanshu Kulkarni [60%] | 3h | 183 |
| 28 | 2.1.3 | Identify all the fixed costs |  | 1d | 2018-11-12 11:02 | 2018-11-13 08:02 | 27 | 265.54d | 0d |  | Sudhanshu Kulkarni [40%] | 2h | 122 |

| ID | WBS | Task | Duration | Start | Finish | Predecessors | Total slack | Free slack | Resources | Work | Cost |
| --- | --- | --- | --- | --- | --- | --- | --- | --- | --- | --- | --- |
| 29 | 2.2 | **Develop a Schedule Management Plan** | 2.4d | 2018-11-13 08:02 | 2018-11-14 13:02 |  | 265.54d |  |  | 10h | 610 |
| 30 | 2.2.1 | **Develop a WBS** | 2.4d | 2018-11-13 08:02 | 2018-11-14 13:02 |  | 265.54d |  |  | 10h | 610 |
| 31 | 2.2.1.1 | Define sprint tasks and start and end dates | 1.4d | 2018-11-13 08:02 | 2018-11-13 16:02 | 28 | 265.54d | 0d | Sudhanshu Kulkarni | 7h | 427 |
| 32 | 2.2.1.2 | Define milestones | 1d | 2018-11-13 16:02 | 2018-11-14 13:02 | 31 | 265.54d | 0d | Sudhanshu Kulkarni [60%] | 3h | 183 |
| 33 | 2.3 | **Develop a Communication Plan** | 0.37d | 2018-11-14 13:02 | 2018-11-14 14:52 |  | 265.54d |  |  | 6h | 94.05 |
| 34 | 2.3.1 | **Weekly status meeting with stakeholders** | 0.17d | 2018-11-14 13:02 | 2018-11-14 13:52 |  | 270.85d |  |  | 2h | 20.33 |
| 35 | 2.3.1.1 | Establish a communication media for meetings | 0.17d | 2018-11-14 13:02 | 2018-11-14 13:52 | 32 | 270.85d |  | Angela R. Berry [40%]; Apurv Khanna [40%]; Javier Pareja [40%]; Piro Hernandez [40%]; Sudhanshu Kulkarni [40%]; Susan Levy [40%] | 2h | 20.33 |
| 36 | 2.3.2 | **Daily status meeting with World Hotels** | 0.35d | 2018-11-14 13:02 | 2018-11-14 14:47 |  | 270.67d |  |  | 2h | 51.35 |
| 37 | 2.3.2.1 | Establish a communication media for meetings | 0.1d | 2018-11-14 13:02 | 2018-11-14 13:32 | 32 | 270.67d | 0d | James Sanduzi [20%]; Javier Pareja [20%]; Karen Watson [20%]; Mary Garcia [20%]; Phillip Grome [20%]; Piro Hernandez [20%]; Robert T. Murray [20%]; Stephanie Lewis [20%]; Sudhanshu Kulkarni [20%]; Susan Levy [20%] | 1h | 36.1 |
| 38 | 2.3.2.2 | Get approval from stakeholders | 0.25d | 2018-11-14 13:32 | 2018-11-14 14:47 | 37 | 270.67d |  | Javier Pareja [20%]; Piro Hernandez [20%]; Sudhanshu Kulkarni [20%]; Susan Levy [20%] | 1h | 15.25 |
| 39 | 2.3.3 | **Weekly status meeting with Blue Prism Inc** | 0.37d | 2018-11-14 13:02 | 2018-11-14 14:52 |  | 265.54d |  |  | 2h | 22.37 |
| 40 | 2.3.3.1 | Establish a communication media for meetings | 0.2d | 2018-11-14 13:02 | 2018-11-14 14:02 | 32 | 265.54d | 0d | Angela R. Berry [20%]; Apurv Khanna [20%]; Cynthia Wong [20%]; Sudhanshu Kulkarni [20%]; Thomas V. Dugas [20%] | 1h | 12.2 |
| 41 | 2.3.3.2 | Get approval from stakeholders | 0.17d | 2018-11-14 14:02 | 2018-11-14 14:52 | 40 | 265.54d | 0d | Angela R. Berry [20%]; Apurv Khanna [20%]; Javier Pareja [20%]; Piro Hernandez [20%]; Sudhanshu Kulkarni [20%]; Susan Levy [20%] | 1h | 10.17 |
| 42 | 2.4 | **Develop a Risk Management Plan** | 1.6d | 2018-11-14 14:52 | 2018-11-15 14:52 |  | 265.54d |  |  | 28h | 341.6 |
| 43 | 2.4.1 | Identify risk(s) | 0.2d | 2018-11-14 14:52 | 2018-11-14 15:52 | 41 | 265.54d | 0d | Javier Pareja; Piro Hernandez; Sudhanshu Kulkarni; Susan Levy; Apurv Khanna | 5h | 61 |
| 44 | 2.4.2 | Quantifying risk(s) | 0.4d | 2018-11-14 15:52 | 2018-11-15 08:52 | 43 | 265.54d | 0d | Javier Pareja; Piro Hernandez; Sudhanshu Kulkarni; Susan Levy; Apurv Khanna | 10h | 122 |
| 45 | 2.4.3 | Prioritising risk(s) | 0.2d | 2018-11-15 08:52 | 2018-11-15 09:52 | 44 | 265.54d | 0d | Javier Pareja; Piro Hernandez; Sudhanshu Kulkarni; Susan Levy; Apurv Khanna | 5h | 61 |
| 46 | 2.4.4 | **Develop a mitigation plan** | 0.8d | 2018-11-15 09:52 | 2018-11-15 14:52 |  | 265.54d |  |  | 8h | 97.6 |
| 47 | 2.4.4.1 | Avoid risk(s) | 0.2d | 2018-11-15 09:52 | 2018-11-15 10:52 | 45 | 265.54d | 0d | Javier Pareja [40%]; Piro Hernandez [40%]; Sudhanshu Kulkarni [40%]; Susan Levy [40%]; Apurv Khanna [40%] | 2h | 24.4 |
| 48 | 2.4.4.2 | Share risk(s) | 0.2d | 2018-11-15 10:52 | 2018-11-15 11:52 | 47 | 265.54d | 0d | Javier Pareja [40%]; Piro Hernandez [40%]; Sudhanshu Kulkarni [40%]; Susan Levy [40%]; Apurv Khanna [40%] | 2h | 24.4 |
| 49 | 2.4.4.3 | Reduce risk(s) | 0.2d | 2018-11-15 11:52 | 2018-11-15 13:52 | 48 | 265.54d | 0d | Javier Pareja [40%]; Piro Hernandez [40%]; Sudhanshu Kulkarni [40%]; Susan Levy [40%]; Apurv Khanna [40%] | 2h | 24.4 |
| 50 | 2.4.4.4 | Transfer risk(s) | 0.2d | 2018-11-15 13:52 | 2018-11-15 14:52 | 49 | 265.54d | 0d | Javier Pareja [40%]; Piro Hernandez [40%]; Sudhanshu Kulkarni [40%]; Susan Levy [40%]; Apurv Khanna [40%] | 2h | 24.4 |
| 51 | 2.5 | **Technical Plan** | 3.07d | 2018-11-15 14:52 | 2018-11-18 14:12 |  | 265.54d |  |  | 45h | 2,243.5 |
| 52 | 2.5.1 | Develop plan for technical supervision | 0.2d | 2018-11-15 14:52 | 2018-11-15 15:52 | 50 | 265.54d | 0d | Javier Pareja [50%]; Piro Hernandez [50%]; Robert T. Murray [50%]; Sudhanshu Kulkarni [50%]; Susan Levy [50%] | 2.5h | 53 |
| 53 | 2.5.2 | Define business requirements | 0.2d | 2018-11-15 15:52 | 2018-11-15 16:52 | 52 | 265.54d | 0d | Apurv Khanna [50%]; Javier Pareja [50%]; Piro Hernandez [50%]; Sudhanshu Kulkarni [50%]; Susan Levy [50%] | 2.5h | 30.5 |
| 54 | 2.5.3 | Develop system architecture | 1.33d | 2018-11-15 16:52 | 2018-11-16 15:32 | 53 | 265.54d | 0d | James Sanduzi; Robert T. Murray; Sudhanshu Kulkarni | 20h | 1,080 |
| 55 | 2.5.4 | Develop system design | 1.33d | 2018-11-16 15:32 | 2018-11-18 14:12 | 54 | 265.54d | 0d | James Sanduzi; Robert T. Murray; Sudhanshu Kulkarni | 20h | 1,080 |

| ID | WBS | Task | Type | Duration | Start | Finish | Predecessors | Total slack | Free slack | Constraint | Resources | Work | Cost |
| --- | --- | --- | --- | --- | --- | --- | --- | --- | --- | --- | --- | --- | --- |
| 56 | 2.6 | **Documentation** |  | 0.2d | 2018-11-18 14:12 | 2018-11-18 15:12 |  | 265.54d |  |  |  | 5h | 182.5 |
| 57 | 2.6.1 | Develop a high level design document |  | 0.2d | 2018-11-18 14:12 | 2018-11-18 15:12 | 55 | 265.54d | 0d |  | Cynthia Wong; Mary Garcia; Phillip Grome; Thomas V. Dugas; Sudhanshu Kulkarni | 5h | 182.5 |
| 58 | 2.7 | **Sign-off with Stakeholders** |  | 1.09d | 2018-11-18 10:00 | 2018-11-18 16:27 |  | 64.9d |  |  |  | 3h | 45.75 |
| 59 | 2.7.1 | Present WBS | milestone | 0.25d | 2018-11-18 15:12 | 2018-11-18 16:27 | 57 | 265.54d |  |  | Javier Pareja [20%]; Piro Hernandez [20%]; Sudhanshu Kulkarni [20%]; Susan Levy [20%] | 1h | 15.25 |
| 60 | 2.7.2 | Present Project and Budget Plan | milestone | 0.25d | 2018-11-18 10:00 | 2018-11-18 11:15 |  | 64.9d | 0d | start no earlier than 2018-11-18 10:00 | Javier Pareja [20%]; Piro Hernandez [20%]; Sudhanshu Kulkarni [20%]; Susan Levy [20%] | 1h | 15.25 |
| 61 | 2.7.3 | Present High Level Design | milestone | 0.25d | 2018-11-18 11:15 | 2018-11-18 13:30 | 60 | 64.9d | 0d |  | Javier Pareja [20%]; Piro Hernandez [20%]; Sudhanshu Kulkarni [20%]; Susan Levy [20%] | 1h | 15.25 |
| 62 | 2.8 | **Document Revision** |  | 0.2d | 2018-11-18 13:30 | 2018-11-18 14:30 |  | 64.9d |  |  |  | 5h | 182.5 |
| 63 | 2.8.1 | Revise all the necessary documents as per the project demands |  | 0.2d | 2018-11-18 13:30 | 2018-11-18 14:30 | 61 | 64.9d |  |  | Cynthia Wong; Mary Garcia; Phillip Grome; Thomas V. Dugas; Sudhanshu Kulkarni | 5h | 182.5 |
| 64 | 3 | **Implementation of the Project** |  | 187.29d | 2019-01-15 10:00 | 2019-06-28 10:28 |  |  |  |  |  | 2602h | 107,802.94 |
| 65 | 3.1 | **Accounting System Module** |  | 44.12d | 2019-01-15 10:00 | 2019-02-21 15:35 |  | 0d |  |  |  | 606h | 25,175.68 |
| 66 | 3.1.1 | **Sprint 1** |  | 13.64d | 2019-01-15 10:00 | 2019-01-25 15:12 |  | 0d |  |  |  | 193h | 8,121.55 |
| 67 | 3.1.1.1 | Enlist the tasks to be completed |  | 0.12d | 2019-01-15 10:00 | 2019-01-15 10:37 | 63 | 0d |  |  | Apurv Khanna; Cynthia Wong; James Sanduzi; Karen Watson; Robert T. Murray; Sudhanshu Kulkarni; Thomas V. Dugas; Mary Garcia | 5h | 161.58 |
| 68 | 3.1.1.2 | Develop a detailed design plan |  | 0.56d | 2019-01-15 10:37 | 2019-01-15 14:24 | 67 | 0d |  |  | Apurv Khanna; Cynthia Wong; James Sanduzi; Karen Watson; Robert T. Murray; Sudhanshu Kulkarni; Thomas V. Dugas; Mary Garcia; Stephanie Lewis | 25h | 829.17 |
| 69 | 3.1.1.3 | Programming for the tasks |  | 5d | 2019-01-15 14:24 | 2019-01-18 15:24 | 68 | 0d |  |  | Cynthia Wong; Mary Garcia; Phillip Grome; Robert T. Murray | 100h | 4,162.5 |
| 70 | 3.1.1.4 | Unit testing for the tasks |  | 2d | 2019-01-18 15:24 | 2019-01-22 08:24 | 69 | 0d |  |  | James Sanduzi; Karen Watson; Mary Garcia; Robert T. Murray; Stephanie Lewis | 50h | 2,375 |
| 71 | 3.1.1.5 | **Monitor progress of the project** |  | 5.96d | 2019-01-22 08:24 | 2019-01-25 15:12 |  | 0d |  |  |  | 6h | 166.31 |
| 72 | 3.1.1.5.1 | **Daily status meeting with World Hotels** |  | 1.29d | 2019-01-22 08:24 | 2019-01-22 15:50 |  | 0d |  |  |  | 2h | 77.09 |
| 73 | 3.1.1.5.1.1 | Gather work progress and document |  | 0.25d | 2019-01-22 08:24 | 2019-01-22 09:39 | 70 | 0d |  |  | James Sanduzi [10%]; Karen Watson [10%]; Mary Garcia [10%]; Robert T. Murray [10%]; Stephanie Lewis [10%]; Sudhanshu Kulkarni [10%] | 0.75h | 37.31 |
| 74 | 3.1.1.5.1.2 | Identify risks, show stopper(s) and update document |  | 0.04d | 2019-01-22 09:39 | 2019-01-22 09:50 | 73 | 0d |  | start no earlier than 2018-09-11 10:00 | Sudhanshu Kulkarni [5%]; Apurv Khanna; Robert T. Murray; Susan Levy; Thomas V. Dugas | 0.75h | 8.91 |
| 75 | 3.1.1.5.1.3 | Develop/update progress report |  | 1d | 2019-01-22 09:50 | 2019-01-22 15:50 | 74 | 0d |  |  | Phillip Grome [5%]; Sudhanshu Kulkarni [5%] | 0.5h | 30.88 |
| 76 | 3.1.1.5.2 | **Weekly status meeting with Blue Prism Inc.** |  | 3.88d | 2019-01-22 15:50 | 2019-01-25 10:12 |  | 0d |  |  |  | 2h | 64.81 |
| 77 | 3.1.1.5.2.1 | Gather work progress and document |  | 0.38d | 2019-01-22 15:50 | 2019-01-23 08:42 | 75 | 0d |  |  | Apurv Khanna [10%]; Cynthia Wong [10%]; Sudhanshu Kulkarni [10%]; Thomas V. Dugas [10%] | 0.75h | 11.44 |
| 78 | 3.1.1.5.2.2 | Identify risks, show stopper(s) and update document |  | 1.5d | 2019-01-23 08:42 | 2019-01-24 08:12 | 77 | 0d |  |  | Apurv Khanna [5%]; Sudhanshu Kulkarni [5%] | 0.75h | 22.88 |
| 79 | 3.1.1.5.2.3 | Develop/update progress report |  | 2d | 2019-01-24 08:12 | 2019-01-25 10:12 | 78 | 0d |  |  | Sudhanshu Kulkarni [5%] | 0.5h | 30.5 |

| ID | WBS | Task | Duration | Start | Finish | Predecessors | Total slack | Resources | Work | Cost |
| --- | --- | --- | --- | --- | --- | --- | --- | --- | --- | --- |
| 80 | 3.1.1.5.3 | **Weekly status meeting with stakeholders** | 0.8d | 2019-01-25 10:12 | 2019-01-25 15:12 |  | 0d |  | 2h | 24.4 |
| 81 | 3.1.1.5.3.1 | Discuss project progress and share progress reports | 0.4d | 2019-01-25 10:12 | 2019-01-25 13:12 | 79 | 0d | Angela R. Berry [10%]; Javier Pareja [10%]; Piro Hernandez [10%]; Sudhanshu Kulkarni [10%]; Susan Levy [10%] | 1h | 12.2 |
| 82 | 3.1.1.5.3.2 | Present risk(s), show stopper(s) | 0.4d | 2019-01-25 13:12 | 2019-01-25 15:12 | 81 | 0d | Angela R. Berry [10%]; Javier Pareja [10%]; Piro Hernandez [10%]; Sudhanshu Kulkarni [10%]; Susan Levy [10%] | 1h | 12.2 |
| 83 | 3.1.1.6 | Technical supervision | 1.4d | 2019-01-15 10:37 | 2019-01-16 09:37 | 67 | 199.5d | Sudhanshu Kulkarni | 7h | 427 |
| 84 | 3.1.2 | **Sprint 2** | 14.13d | 2019-01-25 15:12 | 2019-02-07 13:51 |  | 0d |  | 192.5h | 8,065.05 |
| 85 | 3.1.2.1 | Create a backlog list of sprint 1 according to the user stories | 0.12d | 2019-01-25 15:12 | 2019-01-25 15:50 | 82 | 0d | Apurv Khanna [40%]; Cynthia Wong [40%]; James Sanduzi [40%]; Karen Watson [40%]; Robert T. Murray [40%]; Sudhanshu Kulkarni [40%]; Thomas V. Dugas [40%]; Mary Garcia [40%] | 2h | 64.62 |
| 86 | 3.1.2.2 | Enlist the tasks to be completed | 0.12d | 2019-01-25 15:50 | 2019-01-25 16:27 | 85 | 0d | Apurv Khanna; Cynthia Wong; James Sanduzi; Karen Watson; Robert T. Murray; Sudhanshu Kulkarni; Thomas V. Dugas; Mary Garcia | 5h | 161.56 |
| 87 | 3.1.2.3 | Develop a detailed design plan | 0.56d | 2019-01-25 16:27 | 2019-01-28 10:14 | 86 | 0d | Apurv Khanna; Cynthia Wong; James Sanduzi; Karen Watson; Robert T. Murray; Sudhanshu Kulkarni; Thomas V. Dugas; Mary Garcia; Stephanie Lewis | 25h | 829.17 |
| 88 | 3.1.2.4 | Programming for the tasks | 5d | 2019-01-28 10:14 | 2019-01-31 11:14 | 87 | 0d | Cynthia Wong; Mary Garcia; Phillip Grome; Robert T. Murray | 100h | 4,162.5 |
| 89 | 3.1.2.5 | Unit testing for the tasks | 2d | 2019-01-31 11:14 | 2019-02-01 14:14 | 88 | 0d | James Sanduzi; Karen Watson; Mary Garcia; Robert T. Murray; Stephanie Lewis | 50h | 2,375 |
| 90 | 3.1.2.6 | **Monitor progress of the project** | 6.33d | 2019-02-01 14:14 | 2019-02-07 13:51 |  | 0d |  | 5.5h | 167.2 |
| 91 | 3.1.2.6.1 | **Daily status meeting with World Hotels** | 1.85d | 2019-02-01 14:14 | 2019-02-04 15:29 |  | 0d |  | 2h | 84.09 |
| 92 | 3.1.2.6.1.1 | Gather work progress and document | 0.25d | 2019-02-01 14:14 | 2019-02-01 15:29 | 89 | 0d | James Sanduzi [10%]; Karen Watson [10%]; Mary Garcia [10%]; Robert T. Murray [10%]; Stephanie Lewis [10%]; Sudhanshu Kulkarni [10%] | 0.75h | 37.31 |
| 93 | 3.1.2.6.1.2 | Identify risks, show stopper(s) and update document | 0.6d | 2019-02-01 15:29 | 2019-02-04 09:29 | 92 | 0d | Sudhanshu Kulkarni [5%]; Apurv Khanna [5%]; Robert T. Murray [5%]; Susan Levy [5%]; Thomas V. Dugas [5%] | 0.75h | 15.9 |
| 94 | 3.1.2.6.1.3 | Develop/update progress report | 1d | 2019-02-04 09:29 | 2019-02-04 15:29 | 93 | 0d | Phillip Grome [5%]; Sudhanshu Kulkarni [5%] | 0.5h | 30.88 |
| 95 | 3.1.2.6.2 | **Weekly status meeting with Blue Prism Inc.** | 3.88d | 2019-02-04 15:29 | 2019-02-07 09:51 |  | 0d |  | 2h | 64.81 |
| 96 | 3.1.2.6.2.1 | Gather work progress and document | 0.38d | 2019-02-04 15:29 | 2019-02-05 08:21 | 94 | 0d | Apurv Khanna [10%]; Cynthia Wong [10%]; Sudhanshu Kulkarni [10%]; Thomas V. Dugas [10%] | 0.75h | 11.44 |
| 97 | 3.1.2.6.2.2 | Identify risks, show stopper(s) and update document | 1.5d | 2019-02-05 08:21 | 2019-02-05 16:51 | 96 | 0d | Apurv Khanna [5%]; Sudhanshu Kulkarni [5%] | 0.75h | 22.88 |
| 98 | 3.1.2.6.2.3 | Develop/update progress report | 2d | 2019-02-05 16:51 | 2019-02-07 09:51 | 97 | 0d | Sudhanshu Kulkarni [5%] | 0.5h | 30.5 |
| 99 | 3.1.2.6.3 | **Weekly status meeting with stakeholders** | 0.6d | 2019-02-07 09:51 | 2019-02-07 13:51 |  | 0d |  | 1.5h | 18.3 |
| 100 | 3.1.2.6.3.1 | Discuss project progress and share progress reports | 0.3d | 2019-02-07 09:51 | 2019-02-07 11:21 | 98 | 0d | Angela R. Berry [10%]; Javier Pareja [10%]; Piro Hernandez [10%]; Sudhanshu Kulkarni [10%]; Susan Levy [10%] | 0.75h | 9.15 |
| 101 | 3.1.2.6.3.2 | Present risk(s), show stopper(s) | 0.3d | 2019-02-07 11:21 | 2019-02-07 13:51 | 100 | 0d | Angela R. Berry [10%]; Javier Pareja [10%]; Piro Hernandez [10%]; Sudhanshu Kulkarni [10%]; Susan Levy [10%] | 0.75h | 9.15 |
| 102 | 3.1.2.7 | Technical supervision | 1d | 2019-01-25 15:50 | 2019-01-28 11:50 | 85 | 186.26d | Sudhanshu Kulkarni | 5h | 305 |
| 103 | 3.1.3 | **Sprint 3** | 14.13d | 2019-02-07 13:51 | 2019-02-20 11:30 |  | 0d |  | 192.5h | 8,065.05 |
| 104 | 3.1.3.1 | Create a backlog list of sprint 2 according to the user stories | 0.12d | 2019-02-07 13:51 | 2019-02-07 14:29 | 101 | 0d | Apurv Khanna [40%]; Cynthia Wong [40%]; James Sanduzi [40%]; Karen Watson [40%]; Robert T. Murray [40%]; Sudhanshu Kulkarni [40%]; Thomas V. Dugas [40%]; Mary Garcia [40%] | 2h | 64.62 |
| 105 | 3.1.3.2 | Enlist the tasks to be completed | 0.12d | 2019-02-07 14:29 | 2019-02-07 15:06 | 104 | 0d | Apurv Khanna; Cynthia Wong; James Sanduzi; Karen Watson; Robert T. Murray; Sudhanshu Kulkarni; Thomas V. Dugas; Mary Garcia | 5h | 161.56 |
| 106 | 3.1.3.3 | Develop a detailed design plan | 0.56d | 2019-02-07 15:06 | 2019-02-08 08:53 | 105 | 0d | Apurv Khanna; Cynthia Wong; James Sanduzi; Karen Watson; Robert T. Murray; Sudhanshu Kulkarni; Thomas V. Dugas; Mary Garcia; Stephanie Lewis | 25h | 829.17 |
| 107 | 3.1.3.4 | Programming for the tasks | 5d | 2019-02-08 08:53 | 2019-02-13 09:53 | 106 | 0d | Cynthia Wong; Mary Garcia; Phillip Grome; Robert T. Murray | 100h | 4,162.5 |
| 108 | 3.1.3.5 | Unit testing for the tasks | 2d | 2019-02-13 09:53 | 2019-02-14 11:53 | 107 | 0d | James Sanduzi; Karen Watson; Mary Garcia; Robert T. Murray; Stephanie Lewis | 50h | 2,375 |

| ID | WBS | Task | Type | Duration | Start | Finish | Predecessors | Total slack | Resources | Work | Cost |
| --- | --- | --- | --- | --- | --- | --- | --- | --- | --- | --- | --- |
| 109 | 3.1.3.6 | **Monitor progress of the project** |  | 6.33d | 2019-02-14 11:53 | 2019-02-20 11:30 |  | 0d |  | 5.5h | 167.2 |
| 110 | 3.1.3.6.1 | **Daily status meeting with World Hotels** |  | 1.85d | 2019-02-14 11:53 | 2019-02-15 14:08 |  | 0d |  | 2h | 84.09 |
| 111 | 3.1.3.6.1.1 | Gather work progress and document |  | 0.25d | 2019-02-14 11:53 | 2019-02-14 14:08 | 108 | 0d | James Sanduzi [10%]; Karen Watson [10%]; Mary Garcia [10%]; Robert T. Murray [10%]; Stephanie Lewis [10%]; Sudhanshu Kulkarni [10%] | 0.75h | 37.31 |
| 112 | 3.1.3.6.1.2 | Identify risks, show stopper(s) and update document |  | 0.6d | 2019-02-14 14:08 | 2019-02-15 08:08 | 111 | 0d | Sudhanshu Kulkarni [5%]; Apurv Khanna [5%]; Robert T. Murray [5%]; Susan Levy [5%]; Thomas V. Dugas [5%] | 0.75h | 15.9 |
| 113 | 3.1.3.6.1.3 | Develop/update progress report |  | 1d | 2019-02-15 08:08 | 2019-02-15 14:08 | 112 | 0d | Phillip Grome [5%]; Sudhanshu Kulkarni [5%] | 0.5h | 30.88 |
| 114 | 3.1.3.6.2 | **Weekly status meeting with Blue Prism Inc.** |  | 3.88d | 2019-02-15 14:08 | 2019-02-20 08:30 |  | 0d |  | 2h | 64.81 |
| 115 | 3.1.3.6.2.1 | Gather work progress and document |  | 0.38d | 2019-02-15 14:08 | 2019-02-15 16:00 | 113 | 0d | Apurv Khanna [10%]; Cynthia Wong [10%]; Sudhanshu Kulkarni [10%]; Thomas V. Dugas [10%] | 0.75h | 11.44 |
| 116 | 3.1.3.6.2.2 | Identify risks, show stopper(s) and update document |  | 1.5d | 2019-02-15 16:00 | 2019-02-18 15:30 | 115 | 0d | Apurv Khanna [5%]; Sudhanshu Kulkarni [5%] | 0.75h | 22.88 |
| 117 | 3.1.3.6.2.3 | Develop/update progress report |  | 2d | 2019-02-18 15:30 | 2019-02-20 08:30 | 116 | 0d | Sudhanshu Kulkarni [5%] | 0.5h | 30.5 |
| 118 | 3.1.3.6.3 | **Weekly status meeting with stakeholders** |  | 0.6d | 2019-02-20 08:30 | 2019-02-20 11:30 |  | 0d |  | 1.5h | 18.3 |
| 119 | 3.1.3.6.3.1 | Discuss project progress and share progress reports |  | 0.3d | 2019-02-20 08:30 | 2019-02-20 10:00 | 117 | 0d | Angela R. Berry [10%]; Javier Pareja [10%]; Piro Hernandez [10%]; Sudhanshu Kulkarni [10%]; Susan Levy [10%] | 0.75h | 9.15 |
| 120 | 3.1.3.6.3.2 | Present risk(s), show stopper(s) |  | 0.3d | 2019-02-20 10:00 | 2019-02-20 11:30 | 119 | 0d | Angela R. Berry [10%]; Javier Pareja [10%]; Piro Hernandez [10%]; Sudhanshu Kulkarni [10%]; Susan Levy [10%] | 0.75h | 9.15 |
| 121 | 3.1.3.7 | Technical supervision |  | 1d | 2019-02-07 14:29 | 2019-02-08 10:29 | 104 | 172.13d | Sudhanshu Kulkarni | 5h | 305 |
| 122 | 3.1.4 | **User training of accounting system module** |  | 1.05d | 2019-02-20 11:30 | 2019-02-21 08:45 |  | 0d |  | 10h | 260.4 |
| 123 | 3.1.4.1 | Develop a plan for user training |  | 0.25d | 2019-02-20 11:30 | 2019-02-20 13:45 | 120 | 0d | Apurv Khanna [40%]; Robert T. Murray [40%]; Sudhanshu Kulkarni [40%]; Thomas V. Dugas [40%] | 2h | 53 |
| 124 | 3.1.4.2 | Provide user training |  | 0.6d | 2019-02-20 13:45 | 2019-02-20 16:45 | 123 | 0d | Sudhanshu Kulkarni; Thomas V. Dugas | 6h | 183 |
| 125 | 3.1.4.3 | Get sign-off from users | milestone | 0.2d | 2019-02-20 16:45 | 2019-02-21 08:45 | 124 | 0d | Apurv Khanna [40%]; Javier Pareja [40%]; Piro Hernandez [40%]; Sudhanshu Kulkarni [40%]; Susan Levy [40%] | 2h | 24.4 |
| 126 | 3.1.5 | **Documentation** |  | 0.67d | 2019-02-21 08:45 | 2019-02-21 13:05 |  | 0d |  | 10h | 405 |
| 127 | 3.1.5.1 | Develop detailed level design document for the module |  | 0.67d | 2019-02-21 08:45 | 2019-02-21 13:05 | 125 | 0d | Cynthia Wong; Mary Garcia; Phillip Grome | 10h | 405 |
| 128 | 3.1.6 | **Sign-off with Stakeholders** |  | 0.25d | 2019-02-21 13:05 | 2019-02-21 14:20 |  | 0d |  | 3h | 30.5 |
| 129 | 3.1.6.1 | Present the module | milestone | 0.17d | 2019-02-21 13:05 | 2019-02-21 13:55 | 127 | 0d | Angela R. Berry [40%]; Javier Pareja [40%]; Nikki Platenik [40%]; Piro Hernandez [40%]; Sudhanshu Kulkarni [40%]; Susan Levy [40%] | 2h | 20.33 |
| 130 | 3.1.6.2 | Present detailed level design document | milestone | 0.08d | 2019-02-21 13:55 | 2019-02-21 14:20 | 129 | 0d | Angela R. Berry [40%]; Javier Pareja [40%]; Nikki Platenik [40%]; Piro Hernandez [40%]; Sudhanshu Kulkarni [40%]; Susan Levy [40%] | 1h | 10.17 |
| 131 | 3.1.7 | **Document Revision** |  | 0.25d | 2019-02-21 14:20 | 2019-02-21 15:35 |  | 0d |  | 5h | 228.13 |
| 132 | 3.1.7.1 | Revise all the necessary documents as per the project demands |  | 0.25d | 2019-02-21 14:20 | 2019-02-21 15:35 | 130 | 0d | Cynthia Wong; Mary Garcia; Phillip Grome; Sudhanshu Kulkarni | 5h | 228.13 |

| ID | WBS | Task | Duration | Start | Finish | Predecessors | Total slack | Resources | Work | Cost |
| --- | --- | --- | --- | --- | --- | --- | --- | --- | --- | --- |
| 133 | 3.2 | **Customer Relationship System Module** | 30.06d | 2019-02-21 15:35 | 2019-03-20 13:54 |  | 0d |  | 411.5h | 16,998.93 |
| 134 | 3.2.1 | **Sprint 1** | 14.01d | 2019-02-21 15:35 | 2019-03-06 13:37 |  | 0d |  | 190.5h | 8,000.43 |
| 135 | 3.2.1.1 | Enlist the tasks to be completed | 0.12d | 2019-02-21 15:35 | 2019-02-21 16:13 | 132 | 0d | Apurv Khanna; Cynthia Wong; James Sanduzi; Karen Watson; Robert T. Murray; Sudhanshu Kulkarni; Thomas V. Dugas; Mary Garcia | 5h | 161.56 |
| 136 | 3.2.1.2 | Develop a detailed design plan | 0.56d | 2019-02-21 16:13 | 2019-02-22 10:00 | 135 | 0d | Apurv Khanna; Cynthia Wong; James Sanduzi; Karen Watson; Robert T. Murray; Sudhanshu Kulkarni; Thomas V. Dugas; Mary Garcia; Stephanie Lewis | 25h | 829.17 |
| 137 | 3.2.1.3 | Programming for the tasks | 5d | 2019-02-22 10:00 | 2019-02-27 11:00 | 136 | 0d | Cynthia Wong; Mary Garcia; Phillip Grome; Robert T. Murray | 100h | 4,162.5 |
| 138 | 3.2.1.4 | Unit testing for the tasks | 2d | 2019-02-27 11:00 | 2019-02-28 14:00 | 137 | 0d | James Sanduzi; Karen Watson; Mary Garcia; Robert T. Murray; Stephanie Lewis | 50h | 2,375 |
| 139 | 3.2.1.5 | **Monitor progress of the project** | 6.33d | 2019-02-28 14:00 | 2019-03-06 13:37 |  | 0d |  | 5.5h | 167.2 |
| 140 | 3.2.1.5.1 | **Daily status meeting with World Hotels** | 1.85d | 2019-02-28 14:00 | 2019-03-01 15:15 |  | 0d |  | 2h | 84.09 |
| 141 | 3.2.1.5.1.1 | Gather work progress and document | 0.25d | 2019-02-28 14:00 | 2019-02-28 15:15 | 138 | 0d | James Sanduzi [10%]; Karen Watson [10%]; Mary Garcia [10%]; Robert T. Murray [10%]; Stephanie Lewis [10%]; Sudhanshu Kulkarni [10%] | 0.75h | 37.31 |
| 142 | 3.2.1.5.1.2 | Identify risks, show stopper(s) and update document | 0.6d | 2019-02-28 15:15 | 2019-03-01 09:15 | 141 | 0d | Sudhanshu Kulkarni [5%]; Apurv Khanna [5%]; Robert T. Murray [5%]; Susan Levy [5%]; Thomas V. Dugas [5%] | 0.75h | 15.9 |
| 143 | 3.2.1.5.1.3 | Develop/update progress report | 1d | 2019-03-01 09:15 | 2019-03-01 15:15 | 142 | 0d | Phillip Grome [5%]; Sudhanshu Kulkarni [5%] | 0.5h | 30.88 |
| 144 | 3.2.1.5.2 | **Weekly status meeting with Blue Prism Inc.** | 3.88d | 2019-03-01 15:15 | 2019-03-06 09:37 |  | 0d |  | 2h | 64.81 |
| 145 | 3.2.1.5.2.1 | Gather work progress and document | 0.38d | 2019-03-01 15:15 | 2019-03-04 08:07 | 143 | 0d | Apurv Khanna [10%]; Cynthia Wong [10%]; Sudhanshu Kulkarni [10%]; Thomas V. Dugas [10%] | 0.75h | 11.44 |
| 146 | 3.2.1.5.2.2 | Identify risks, show stopper(s) and update document | 1.5d | 2019-03-04 08:07 | 2019-03-04 16:37 | 145 | 0d | Apurv Khanna [5%]; Sudhanshu Kulkarni [5%] | 0.75h | 22.88 |
| 147 | 3.2.1.5.2.3 | Develop/update progress report | 2d | 2019-03-04 16:37 | 2019-03-06 09:37 | 146 | 0d | Sudhanshu Kulkarni [5%] | 0.5h | 30.5 |
| 148 | 3.2.1.5.3 | **Weekly status meeting with stakeholders** | 0.6d | 2019-03-06 09:37 | 2019-03-06 13:37 |  | 0d |  | 1.5h | 18.3 |
| 149 | 3.2.1.5.3.1 | Discuss project progress and share progress reports | 0.3d | 2019-03-06 09:37 | 2019-03-06 11:07 | 147 | 0d | Angela R. Berry [10%]; Javier Pareja [10%]; Piro Hernandez [10%]; Sudhanshu Kulkarni [10%]; Susan Levy [10%] | 0.75h | 9.15 |
| 150 | 3.2.1.5.3.2 | Present risk(s), show stopper(s) | 0.3d | 2019-03-06 11:07 | 2019-03-06 13:37 | 149 | 0d | Angela R. Berry [10%]; Javier Pareja [10%]; Piro Hernandez [10%]; Sudhanshu Kulkarni [10%]; Susan Levy [10%] | 0.75h | 9.15 |
| 151 | 3.2.1.6 | Technical supervision | 1d | 2019-02-21 16:13 | 2019-02-22 13:13 | 135 | 155.78d | Sudhanshu Kulkarni | 5h | 305 |
| 152 | 3.2.2 | **Sprint 2** | 13.84d | 2019-03-06 13:37 | 2019-03-19 09:49 |  | 0d |  | 193h | 8,074.48 |
| 153 | 3.2.2.1 | Create a backlog list of sprint 1 according to the user stories | 0.12d | 2019-03-06 13:37 | 2019-03-06 14:15 | 150 | 0d | Apurv Khanna [40%]; Cynthia Wong [40%]; James Sanduzi [40%]; Karen Watson [40%]; Robert T. Murray [40%]; Sudhanshu Kulkarni [40%]; Thomas V. Dugas [40%]; Mary Garcia [40%] | 2h | 64.62 |
| 154 | 3.2.2.2 | Enlist the tasks to be completed | 0.12d | 2019-03-06 14:15 | 2019-03-06 14:52 | 153 | 0d | Apurv Khanna; Cynthia Wong; James Sanduzi; Karen Watson; Robert T. Murray; Sudhanshu Kulkarni; Thomas V. Dugas; Mary Garcia | 5h | 161.56 |
| 155 | 3.2.2.3 | Develop a detailed design plan | 0.56d | 2019-03-06 14:52 | 2019-03-07 08:39 | 154 | 0d | Apurv Khanna; Cynthia Wong; James Sanduzi; Karen Watson; Robert T. Murray; Sudhanshu Kulkarni; Thomas V. Dugas; Mary Garcia; Stephanie Lewis | 25h | 829.17 |
| 156 | 3.2.2.4 | Programming for the tasks | 5d | 2019-03-07 08:39 | 2019-03-12 09:39 | 155 | 0d | Cynthia Wong; Mary Garcia; Phillip Grome; Robert T. Murray | 100h | 4,162.5 |
| 157 | 3.2.2.5 | Unit testing for the tasks | 2d | 2019-03-12 09:39 | 2019-03-13 11:39 | 156 | 0d | James Sanduzi; Karen Watson; Mary Garcia; Robert T. Murray; Stephanie Lewis | 50h | 2,375 |

| ID | WBS | Task | Type | Duration | Start | Finish | Predecessors | Total slack | Resources | Work | Cost |
| --- | --- | --- | --- | --- | --- | --- | --- | --- | --- | --- | --- |
| 158 | 3.2.2.6 | **Monitor progress of the project** |  | 6.03d | 2019-03-13 11:39 | 2019-03-19 09:49 |  | 0d |  | 6h | 176.62 |
| 159 | 3.2.2.6.1 | **Daily status meeting with World Hotels** |  | 1.73d | 2019-03-13 11:39 | 2019-03-14 13:19 |  | 0d |  | 2h | 91.22 |
| 160 | 3.2.2.6.1.1 | Gather work progress and document |  | 0.33d | 2019-03-13 11:39 | 2019-03-13 14:19 | 157 | 0d | James Sanduzi [10%]; Karen Watson [10%]; Mary Garcia [10%]; Robert T. Murray [10%]; Stephanie Lewis [10%]; Sudhanshu Kulkarni [10%] | 1h | 49.75 |
| 161 | 3.2.2.6.1.2 | Identify risks, show stopper(s) and update document |  | 0.4d | 2019-03-13 14:19 | 2019-03-13 16:19 | 160 | 0d | Sudhanshu Kulkarni [5%]; Apurv Khanna [5%]; Robert T. Murray [5%]; Susan Levy [5%]; Thomas V. Dugas [5%] | 0.5h | 10.6 |
| 162 | 3.2.2.6.1.3 | Develop/update progress report |  | 1d | 2019-03-13 16:19 | 2019-03-14 13:19 | 161 | 0d | Phillip Grome [5%]; Sudhanshu Kulkarni [5%] | 0.5h | 30.88 |
| 163 | 3.2.2.6.2 | **Weekly status meeting with Blue Prism Inc.** |  | 3.5d | 2019-03-14 13:19 | 2019-03-18 14:49 |  | 0d |  | 2h | 61 |
| 164 | 3.2.2.6.2.1 | Gather work progress and document |  | 0.5d | 2019-03-14 13:19 | 2019-03-14 15:49 | 162 | 0d | Apurv Khanna [10%]; Cynthia Wong [10%]; Sudhanshu Kulkarni [10%]; Thomas V. Dugas [10%] | 1h | 15.25 |
| 165 | 3.2.2.6.2.2 | Identify risks, show stopper(s) and update document |  | 1d | 2019-03-14 15:49 | 2019-03-15 11:49 | 164 | 0d | Apurv Khanna [5%]; Sudhanshu Kulkarni [5%] | 0.5h | 15.25 |
| 166 | 3.2.2.6.2.3 | Develop/update progress report |  | 2d | 2019-03-15 11:49 | 2019-03-18 14:49 | 165 | 0d | Sudhanshu Kulkarni [5%] | 0.5h | 30.5 |
| 167 | 3.2.2.6.3 | **Weekly status meeting with stakeholders** |  | 0.8d | 2019-03-18 14:49 | 2019-03-19 09:49 |  | 0d |  | 2h | 24.4 |
| 168 | 3.2.2.6.3.1 | Discuss project progress and share progress reports |  | 0.4d | 2019-03-18 14:49 | 2019-03-18 16:49 | 166 | 0d | Angela R. Berry [10%]; Javier Pareja [10%]; Piro Hernandez [10%]; Sudhanshu Kulkarni [10%]; Susan Levy [10%] | 1h | 12.2 |
| 169 | 3.2.2.6.3.2 | Present risk(s), show stopper(s) |  | 0.4d | 2019-03-18 16:49 | 2019-03-19 09:49 | 168 | 0d | Angela R. Berry [10%]; Javier Pareja [10%]; Piro Hernandez [10%]; Sudhanshu Kulkarni [10%]; Susan Levy [10%] | 1h | 12.2 |
| 170 | 3.2.2.7 | Technical supervision |  | 1d | 2019-03-06 14:15 | 2019-03-07 10:15 | 153 | 141.78d | Sudhanshu Kulkarni | 5h | 305 |
| 171 | 3.2.3 | **User training of customer relationship system module** |  | 1.05d | 2019-03-19 09:49 | 2019-03-19 16:04 |  | 0d |  | 10h | 260.4 |
| 172 | 3.2.3.1 | Develop a plan for user training |  | 0.25d | 2019-03-19 09:49 | 2019-03-19 11:04 | 169 | 0d | Apurv Khanna [40%]; Robert T. Murray [40%]; Sudhanshu Kulkarni [40%]; Thomas V. Dugas [40%] | 2h | 53 |
| 173 | 3.2.3.2 | Provide user training |  | 0.6d | 2019-03-19 11:04 | 2019-03-19 15:04 | 172 | 0d | Sudhanshu Kulkarni; Thomas V. Dugas | 6h | 183 |
| 174 | 3.2.3.3 | Get sign-off from users | milestone | 0.2d | 2019-03-19 15:04 | 2019-03-19 16:04 | 173 | 0d | Apurv Khanna [40%]; Javier Pareja [40%]; Piro Hernandez [40%]; Sudhanshu Kulkarni [40%]; Susan Levy [40%] | 2h | 24.4 |
| 175 | 3.2.4 | **Documentation** |  | 0.67d | 2019-03-19 16:04 | 2019-03-20 10:24 |  | 0d |  | 10h | 405 |
| 176 | 3.2.4.1 | Develop detailed level design document for the module |  | 0.67d | 2019-03-19 16:04 | 2019-03-20 10:24 | 174 | 0d | Cynthia Wong; Mary Garcia; Phillip Grome | 10h | 405 |
| 177 | 3.2.5 | **Sign-off with Stakeholders** |  | 0.25d | 2019-03-20 10:24 | 2019-03-20 11:39 |  | 0d |  | 3h | 30.5 |
| 178 | 3.2.5.1 | Present the module | milestone | 0.17d | 2019-03-20 10:24 | 2019-03-20 11:14 | 176 | 0d | Angela R. Berry [40%]; Javier Pareja [40%]; Nikki Platenik [40%]; Piro Hernandez [40%]; Sudhanshu Kulkarni [40%]; Susan Levy [40%] | 2h | 20.33 |
| 179 | 3.2.5.2 | Present detailed level design document | milestone | 0.08d | 2019-03-20 11:14 | 2019-03-20 11:39 | 178 | 0d | Angela R. Berry [40%]; Javier Pareja [40%]; Nikki Platenik [40%]; Piro Hernandez [40%]; Sudhanshu Kulkarni [40%]; Susan Levy [40%] | 1h | 10.17 |
| 180 | 3.2.6 | **Document Revision** |  | 0.25d | 2019-03-20 11:39 | 2019-03-20 13:54 |  | 0d |  | 5h | 228.13 |
| 181 | 3.2.6.1 | Revise all the necessary documents as per the project demands |  | 0.25d | 2019-03-20 11:39 | 2019-03-20 13:54 | 179 | 0d | Cynthia Wong; Mary Garcia; Phillip Grome; Sudhanshu Kulkarni | 5h | 228.13 |

| ID | WBS | Task | Duration | Start | Finish | Predecessors | Total slack | Resources | Work | Cost |
| --- | --- | --- | --- | --- | --- | --- | --- | --- | --- | --- |
| 182 | 3.3 | **Event Calendar Module** | 27.47d | 2019-03-20 13:54 | 2019-04-12 15:16 |  | 0d |  | 385h | 15,896.46 |
| 183 | 3.3.1 | **Sprint 1** | 13.71d | 2019-03-20 13:54 | 2019-04-02 09:25 |  | 0d |  | 179h | 7,525.65 |
| 184 | 3.3.1.1 | Enlist the tasks to be completed | 0.12d | 2019-03-20 13:54 | 2019-03-20 14:31 | 181 | 0d | Apurv Khanna [60%]; Cynthia Wong [60%]; James Sanduzi [60%]; Karen Watson [60%]; Robert T. Murray [60%]; Sudhanshu Kulkarni [60%]; Thomas V. Dugas [60%]; Mary Garcia [60%] | 3h | 96.94 |
| 185 | 3.3.1.2 | Develop a detailed design plan | 0.56d | 2019-03-20 14:31 | 2019-03-21 08:18 | 184 | 0d | Apurv Khanna; Cynthia Wong; James Sanduzi; Karen Watson; Robert T. Murray; Sudhanshu Kulkarni; Thomas V. Dugas; Mary Garcia; Stephanie Lewis | 25h | 829.17 |
| 186 | 3.3.1.3 | Programming for the tasks | 4.5d | 2019-03-21 08:18 | 2019-03-25 15:48 | 185 | 0d | Cynthia Wong; Mary Garcia; Phillip Grome; Robert T. Murray | 90h | 3,746.25 |
| 187 | 3.3.1.4 | Unit testing for the tasks | 2d | 2019-03-25 15:48 | 2019-03-27 08:48 | 186 | 0d | James Sanduzi; Karen Watson; Mary Garcia; Robert T. Murray; Stephanie Lewis | 50h | 2,375 |
| 188 | 3.3.1.5 | **Monitor progress of the project** | 6.53d | 2019-03-27 08:48 | 2019-04-02 09:25 |  | 0d |  | 6h | 173.3 |
| 189 | 3.3.1.5.1 | **Daily status meeting with World Hotels** | 1.85d | 2019-03-27 08:48 | 2019-03-28 10:03 |  | 0d |  | 2h | 84.09 |
| 190 | 3.3.1.5.1.1 | Gather work progress and document | 0.25d | 2019-03-27 08:48 | 2019-03-27 10:03 | 187 | 0d | James Sanduzi [10%]; Karen Watson [10%]; Mary Garcia [10%]; Robert T. Murray [10%]; Stephanie Lewis [10%]; Sudhanshu Kulkarni [10%] | 0.75h | 37.31 |
| 191 | 3.3.1.5.1.2 | Identify risks, show stopper(s) and update document | 0.6d | 2019-03-27 10:03 | 2019-03-27 14:03 | 190 | 0d | Sudhanshu Kulkarni [5%]; Apurv Khanna [5%]; Robert T. Murray [5%]; Susan Levy [5%]; Thomas V. Dugas [5%] | 0.75h | 15.9 |
| 192 | 3.3.1.5.1.3 | Develop/update progress report | 1d | 2019-03-27 14:03 | 2019-03-28 10:03 | 191 | 0d | Phillip Grome [5%]; Sudhanshu Kulkarni [5%] | 0.5h | 30.88 |
| 193 | 3.3.1.5.2 | **Weekly status meeting with Blue Prism Inc.** | 3.88d | 2019-03-28 10:03 | 2019-04-01 14:25 |  | 0d |  | 2h | 64.81 |
| 194 | 3.3.1.5.2.1 | Gather work progress and document | 0.38d | 2019-03-28 10:03 | 2019-03-28 11:55 | 192 | 0d | Apurv Khanna [10%]; Cynthia Wong [10%]; Sudhanshu Kulkarni [10%]; Thomas V. Dugas [10%] | 0.75h | 11.44 |
| 195 | 3.3.1.5.2.2 | Identify risks, show stopper(s) and update document | 1.5d | 2019-03-28 11:55 | 2019-03-29 11:25 | 194 | 0d | Apurv Khanna [5%]; Sudhanshu Kulkarni [5%] | 0.75h | 22.88 |
| 196 | 3.3.1.5.2.3 | Develop/update progress report | 2d | 2019-03-29 11:25 | 2019-04-01 14:25 | 195 | 0d | Sudhanshu Kulkarni [5%] | 0.5h | 30.5 |
| 197 | 3.3.1.5.3 | **Weekly status meeting with stakeholders** | 0.8d | 2019-04-01 14:25 | 2019-04-02 09:25 |  | 0d |  | 2h | 24.4 |
| 198 | 3.3.1.5.3.1 | Discuss project progress and share progress reports | 0.4d | 2019-04-01 14:25 | 2019-04-01 16:25 | 196 | 0d | Angela R. Berry [10%]; Javier Pareja [10%]; Piro Hernandez [10%]; Sudhanshu Kulkarni [10%]; Susan Levy [10%] | 1h | 12.2 |
| 199 | 3.3.1.5.3.2 | Present risk(s), show stopper(s) | 0.4d | 2019-04-01 16:25 | 2019-04-02 09:25 | 198 | 0d | Angela R. Berry [10%]; Javier Pareja [10%]; Piro Hernandez [10%]; Sudhanshu Kulkarni [10%]; Susan Levy [10%] | 1h | 12.2 |
| 200 | 3.3.1.6 | Technical supervision | 1d | 2019-03-20 14:31 | 2019-03-21 10:31 | 184 | 125.72d | Sudhanshu Kulkarni | 5h | 305 |
| 201 | 3.3.2 | **Sprint 2** | 13.77d | 2019-04-02 09:25 | 2019-04-12 15:16 |  | 0d |  | 178h | 7,446.78 |
| 202 | 3.3.2.1 | Create a backlog list of sprint 1 according to the user stories | 0.12d | 2019-04-02 09:25 | 2019-04-02 10:03 | 199 | 0d | Apurv Khanna [40%]; Cynthia Wong [40%]; James Sanduzi [40%]; Karen Watson [40%]; Robert T. Murray [40%]; Sudhanshu Kulkarni [40%]; Thomas V. Dugas [40%]; Mary Garcia [40%] | 2h | 64.62 |
| 203 | 3.3.2.2 | Enlist the tasks to be completed | 0.31d | 2019-04-02 10:03 | 2019-04-02 11:37 | 202 | 0d | Apurv Khanna [40%]; Cynthia Wong [40%]; James Sanduzi [40%]; Karen Watson [40%]; Robert T. Murray [40%]; Sudhanshu Kulkarni [40%]; Thomas V. Dugas [40%]; Mary Garcia [40%] | 5h | 161.56 |
| 204 | 3.3.2.3 | Develop a detailed design plan | 0.56d | 2019-04-02 11:37 | 2019-04-02 15:23 | 203 | 0d | Apurv Khanna; Cynthia Wong; James Sanduzi; Karen Watson; Robert T. Murray; Sudhanshu Kulkarni; Thomas V. Dugas; Mary Garcia; Stephanie Lewis | 25h | 829.17 |
| 205 | 3.3.2.4 | Programming for the tasks | 4.25d | 2019-04-02 15:23 | 2019-04-05 11:38 | 204 | 0d | Cynthia Wong; Mary Garcia; Phillip Grome; Robert T. Murray | 85h | 3,538.12 |
| 206 | 3.3.2.5 | Unit testing for the tasks | 2d | 2019-04-05 11:38 | 2019-04-08 14:38 | 205 | 0d | James Sanduzi; Karen Watson; Mary Garcia; Robert T. Murray; Stephanie Lewis | 50h | 2,375 |

| ID | WBS | Task | Type | Duration | Start | Finish | Predecessors | Total slack | Free slack | Resources | Work | Cost |
| --- | --- | --- | --- | --- | --- | --- | --- | --- | --- | --- | --- | --- |
| 207 | 3.3.2.6 | **Monitor progress of the project** |  | 6.53d | 2019-04-08 14:38 | 2019-04-12 15:16 |  | 0d |  |  | 6h | 173.3 |
| 208 | 3.3.2.6.1 | **Daily status meeting with World Hotels** |  | 1.85d | 2019-04-08 14:38 | 2019-04-09 15:53 |  | 0d |  |  | 2h | 84.09 |
| 209 | 3.3.2.6.1.1 | Gather work progress and document |  | 0.25d | 2019-04-08 14:38 | 2019-04-08 15:53 | 206 | 0d |  | James Sanduzi [10%]; Karen Watson [10%]; Mary Garcia [10%]; Robert T. Murray [10%]; Stephanie Lewis [10%]; Sudhanshu Kulkarni [10%] | 0.75h | 37.31 |
| 210 | 3.3.2.6.1.2 | Identify risks, show stopper(s) and update document |  | 0.6d | 2019-04-08 15:53 | 2019-04-09 09:53 | 209 | 0d |  | Sudhanshu Kulkarni [5%]; Apurv Khanna [5%]; Robert T. Murray [5%]; Susan Levy [5%]; Thomas V. Dugas [5%] | 0.75h | 15.9 |
| 211 | 3.3.2.6.1.3 | Develop/update progress report |  | 1d | 2019-04-09 09:53 | 2019-04-09 15:53 | 210 | 99.37d | 0d | Phillip Grome [5%]; Sudhanshu Kulkarni [5%] | 0.5h | 30.88 |
| 212 | 3.3.2.6.2 | **Weekly status meeting with Blue Prism Inc.** |  | 3.88d | 2019-04-09 15:53 | 2019-04-12 10:16 |  | 99.37d |  |  | 2h | 64.81 |
| 213 | 3.3.2.6.2.1 | Gather work progress and document |  | 0.38d | 2019-04-09 15:53 | 2019-04-10 08:46 | 211 | 99.37d | 0d | Apurv Khanna [10%]; Cynthia Wong [10%]; Sudhanshu Kulkarni [10%]; Thomas V. Dugas [10%] | 0.75h | 11.44 |
| 214 | 3.3.2.6.2.2 | Identify risks, show stopper(s) and update document |  | 1.5d | 2019-04-10 08:46 | 2019-04-11 08:16 | 213 | 99.37d | 0d | Apurv Khanna [5%]; Sudhanshu Kulkarni [5%] | 0.75h | 22.88 |
| 215 | 3.3.2.6.2.3 | Develop/update progress report |  | 2d | 2019-04-11 08:16 | 2019-04-12 10:16 | 214 | 99.37d | 0d | Sudhanshu Kulkarni [5%] | 0.5h | 30.5 |
| 216 | 3.3.2.6.3 | **Weekly status meeting with stakeholders** |  | 0.8d | 2019-04-12 10:16 | 2019-04-12 15:16 |  | 99.37d |  |  | 2h | 24.4 |
| 217 | 3.3.2.6.3.1 | Discuss project progress and share progress reports |  | 0.4d | 2019-04-12 10:16 | 2019-04-12 13:16 | 215 | 99.37d | 0d | Angela R. Berry [10%]; Javier Pareja [10%]; Piro Hernandez [10%]; Sudhanshu Kulkarni [10%]; Susan Levy [10%] | 1h | 12.2 |
| 218 | 3.3.2.6.3.2 | Present risk(s), show stopper(s) |  | 0.4d | 2019-04-12 13:16 | 2019-04-12 15:16 | 217 | 99.37d |  | Angela R. Berry [10%]; Javier Pareja [10%]; Piro Hernandez [10%]; Sudhanshu Kulkarni [10%]; Susan Levy [10%] | 1h | 12.2 |
| 219 | 3.3.2.7 | Technical supervision |  | 1d | 2019-04-02 10:03 | 2019-04-02 16:03 | 202 | 112.02d |  | Sudhanshu Kulkarni | 5h | 305 |
| 220 | 3.3.3 | **User training of event calendar module** |  | 1.05d | 2019-04-09 09:53 | 2019-04-09 16:08 |  | 0d |  |  | 10h | 260.4 |
| 221 | 3.3.3.1 | Develop a plan for user training |  | 0.25d | 2019-04-09 09:53 | 2019-04-09 11:08 | 210 | 0d |  | Apurv Khanna [40%]; Robert T. Murray [40%]; Sudhanshu Kulkarni [40%]; Thomas V. Dugas [40%] | 2h | 53 |
| 222 | 3.3.3.2 | Provide user training |  | 0.6d | 2019-04-09 11:08 | 2019-04-09 15:08 | 221 | 0d |  | Sudhanshu Kulkarni; Thomas V. Dugas | 6h | 183 |
| 223 | 3.3.3.3 | Get sign-off from users | milestone | 0.2d | 2019-04-09 15:08 | 2019-04-09 16:08 | 222 | 0d |  | Apurv Khanna [40%]; Javier Pareja [40%]; Piro Hernandez [40%]; Sudhanshu Kulkarni [40%]; Susan Levy [40%] | 2h | 24.4 |
| 224 | 3.3.4 | **Documentation** |  | 0.67d | 2019-04-09 16:08 | 2019-04-10 10:28 |  | 0d |  |  | 10h | 405 |
| 225 | 3.3.4.1 | Develop detailed level design document for the module |  | 0.67d | 2019-04-09 16:08 | 2019-04-10 10:28 | 223 | 0d |  | Cynthia Wong; Mary Garcia; Phillip Grome | 10h | 405 |
| 226 | 3.3.5 | **Sign-off with Stakeholders** |  | 0.25d | 2019-04-10 10:28 | 2019-04-10 11:43 |  | 0d |  |  | 3h | 30.5 |
| 227 | 3.3.5.1 | Present the module | milestone | 0.17d | 2019-04-10 10:28 | 2019-04-10 11:18 | 225 | 0d |  | Angela R. Berry [40%]; Javier Pareja [40%]; Nikki Platenik [40%]; Piro Hernandez [40%]; Sudhanshu Kulkarni [40%]; Susan Levy [40%] | 2h | 20.33 |
| 228 | 3.3.5.2 | Present detailed level design document | milestone | 0.08d | 2019-04-10 11:18 | 2019-04-10 11:43 | 227 | 0d |  | Angela R. Berry [40%]; Javier Pareja [40%]; Nikki Platenik [40%]; Piro Hernandez [40%]; Sudhanshu Kulkarni [40%]; Susan Levy [40%] | 1h | 10.17 |
| 229 | 3.3.6 | **Document Revision** |  | 0.25d | 2019-04-10 11:43 | 2019-04-10 13:58 |  | 0d |  |  | 5h | 228.13 |
| 230 | 3.3.6.1 | Revise all the necessary documents as per the project demands |  | 0.25d | 2019-04-10 11:43 | 2019-04-10 13:58 | 228 | 0d |  | Cynthia Wong; Mary Garcia; Phillip Grome; Sudhanshu Kulkarni | 5h | 228.13 |

| ID | WBS | Task | Duration | Start | Finish | Predecessors | Total slack | Resources | Work | Cost |
| --- | --- | --- | --- | --- | --- | --- | --- | --- | --- | --- |
| 231 | 3.4 | **Room Reservation Module** | 57.6d | 2019-04-10 13:58 | 2019-05-31 13:58 |  | 0d |  | 768h | 32,235.85 |
| 232 | 3.4.1 | **Sprint 1** | 13.64d | 2019-04-10 13:58 | 2019-04-23 09:10 |  | 0d |  | 191h | 8,215.83 |
| 233 | 3.4.1.1 | Enlist the tasks to be completed | 0.21d | 2019-04-10 13:58 | 2019-04-10 15:01 | 230 | 0d | Apurv Khanna [60%]; Cynthia Wong [60%]; James Sanduzi [60%]; Karen Watson [60%]; Robert T. Murray [60%]; Sudhanshu Kulkarni [60%]; Thomas V. Dugas [60%]; Mary Garcia [60%] | 5h | 161.56 |
| 234 | 3.4.1.2 | Develop a detailed design plan | 0.56d | 2019-04-10 15:01 | 2019-04-11 08:47 | 233 | 0d | Apurv Khanna; Cynthia Wong; James Sanduzi; Karen Watson; Robert T. Murray; Sudhanshu Kulkarni; Thomas V. Dugas; Stephanie Lewis; Phillip Grome | 25h | 838.81 |
| 235 | 3.4.1.3 | Programming for the tasks | 4.5d | 2019-04-11 08:47 | 2019-04-15 16:17 | 234 | 0d | Cynthia Wong; Mary Garcia; Phillip Grome; Robert T. Murray | 90h | 3,746.25 |
| 236 | 3.4.1.4 | Unit testing for the tasks | 2d | 2019-04-15 16:17 | 2019-04-17 09:17 | 235 | 0d | James Sanduzi; Karen Watson; Mary Garcia; Robert T. Murray; Stephanie Lewis | 50h | 2,375 |
| 237 | 3.4.1.5 | **Monitor progress of the project** | 6.38d | 2019-04-17 09:17 | 2019-04-23 09:10 |  | 0d |  | 6h | 179.21 |
| 238 | 3.4.1.5.1 | **Daily status meeting with World Hotels** | 1.7d | 2019-04-17 09:17 | 2019-04-18 09:47 |  | 0d |  | 2h | 90 |
| 239 | 3.4.1.5.1.1 | Gather work progress and document | 0.1d | 2019-04-17 09:17 | 2019-04-17 09:47 | 236 | 0d | James Sanduzi [10%]; Karen Watson [10%]; Robert T. Murray [10%]; Stephanie Lewis [10%]; Sudhanshu Kulkarni [10%]; Phillip Grome | 0.75h | 43.23 |
| 240 | 3.4.1.5.1.2 | Identify risks, show stopper(s) and update document | 0.6d | 2019-04-17 09:47 | 2019-04-17 13:47 | 239 | 0d | Sudhanshu Kulkarni [5%]; Apurv Khanna [5%]; Robert T. Murray [5%]; Susan Levy [5%]; Thomas V. Dugas [5%] | 0.75h | 15.9 |
| 241 | 3.4.1.5.1.3 | Develop/update progress report | 1d | 2019-04-17 13:47 | 2019-04-18 09:47 | 240 | 0d | Phillip Grome [5%]; Sudhanshu Kulkarni [5%] | 0.5h | 30.88 |
| 242 | 3.4.1.5.2 | **Weekly status meeting with Blue Prism Inc.** | 3.88d | 2019-04-18 09:47 | 2019-04-22 14:10 |  | 0d |  | 2h | 64.81 |
| 243 | 3.4.1.5.2.1 | Gather work progress and document | 0.38d | 2019-04-18 09:47 | 2019-04-18 11:40 | 241 | 0d | Apurv Khanna [10%]; Cynthia Wong [10%]; Sudhanshu Kulkarni [10%]; Thomas V. Dugas [10%] | 0.75h | 11.44 |
| 244 | 3.4.1.5.2.2 | Identify risks, show stopper(s) and update document | 1.5d | 2019-04-18 11:40 | 2019-04-19 11:10 | 243 | 0d | Apurv Khanna [5%]; Sudhanshu Kulkarni [5%] | 0.75h | 22.88 |
| 245 | 3.4.1.5.2.3 | Develop/update progress report | 2d | 2019-04-19 11:10 | 2019-04-22 14:10 | 244 | 0d | Sudhanshu Kulkarni [5%] | 0.5h | 30.5 |
| 246 | 3.4.1.5.3 | **Weekly status meeting with stakeholders** | 0.8d | 2019-04-22 14:10 | 2019-04-23 09:10 |  | 0d |  | 2h | 24.4 |
| 247 | 3.4.1.5.3.1 | Discuss project progress and share progress reports | 0.4d | 2019-04-22 14:10 | 2019-04-22 16:10 | 245 | 0d | Angela R. Berry [10%]; Javier Pareja [10%]; Piro Hernandez [10%]; Sudhanshu Kulkarni [10%]; Susan Levy [10%] | 1h | 12.2 |
| 248 | 3.4.1.5.3.2 | Present risk(s), show stopper(s) | 0.4d | 2019-04-22 16:10 | 2019-04-23 09:10 | 247 | 0d | Angela R. Berry [10%]; Javier Pareja [10%]; Piro Hernandez [10%]; Sudhanshu Kulkarni [10%]; Susan Levy [10%] | 1h | 12.2 |
| 249 | 3.4.1.6 | Technical supervision | 3d | 2019-04-10 15:01 | 2019-04-12 14:01 | 233 | 99.62d | Sudhanshu Kulkarni | 15h | 915 |
| 250 | 3.4.2 | **Sprint 2** | 13.88d | 2019-04-23 09:10 | 2019-05-03 15:33 |  | 0d |  | 183h | 7,688.45 |
| 251 | 3.4.2.1 | Create a backlog list of sprint 1 according to the user stories | 0.11d | 2019-04-23 09:10 | 2019-04-23 09:41 | 248 | 0d | Apurv Khanna [40%]; Cynthia Wong [40%]; James Sanduzi [40%]; Karen Watson [40%]; Robert T. Murray [40%]; Sudhanshu Kulkarni [40%]; Thomas V. Dugas [40%]; Phillip Grome | 2h | 74.89 |
| 252 | 3.4.2.2 | Enlist the tasks to be completed | 0.19d | 2019-04-23 09:41 | 2019-04-23 10:39 | 251 | 0d | Apurv Khanna [60%]; Cynthia Wong [60%]; James Sanduzi [60%]; Karen Watson [60%]; Robert T. Murray [60%]; Sudhanshu Kulkarni [60%]; Thomas V. Dugas [60%]; Phillip Grome | 5h | 175.19 |
| 253 | 3.4.2.3 | Develop a detailed design plan | 0.56d | 2019-04-23 10:39 | 2019-04-23 14:26 | 252 | 0d | Apurv Khanna; Cynthia Wong; James Sanduzi; Karen Watson; Robert T. Murray; Sudhanshu Kulkarni; Thomas V. Dugas; Stephanie Lewis; Phillip Grome | 25h | 838.81 |
| 254 | 3.4.2.4 | Programming for the tasks | 4.5d | 2019-04-23 14:26 | 2019-04-26 11:56 | 253 | 0d | Cynthia Wong; Mary Garcia; Phillip Grome; Robert T. Murray | 90h | 3,746.25 |
| 255 | 3.4.2.5 | Unit testing for the tasks | 2d | 2019-04-26 11:56 | 2019-04-29 14:56 | 254 | 0d | James Sanduzi; Karen Watson; Mary Garcia; Robert T. Murray; Stephanie Lewis | 50h | 2,375 |

| ID | WBS | Task | Duration | Start | Finish | Predecessors | Total slack | Resources | Work | Cost |
| --- | --- | --- | --- | --- | --- | --- | --- | --- | --- | --- |
| 256 | 3.4.2.6 | **Monitor progress of the project** | 6.53d | 2019-04-29 14:56 | 2019-05-03 15:33 |  | 0d |  | 6h | 173.3 |
| 257 | 3.4.2.6.1 | **Daily status meeting with World Hotels** | 1.85d | 2019-04-29 14:56 | 2019-04-30 16:11 |  | 0d |  | 2h | 84.09 |
| 258 | 3.4.2.6.1.1 | Gather work progress and document | 0.25d | 2019-04-29 14:56 | 2019-04-29 16:11 | 255 | 0d | James Sanduzi [10%]; Karen Watson [10%]; Mary Garcia [10%]; Robert T. Murray [10%]; Stephanie Lewis [10%]; Sudhanshu Kulkarni [10%] | 0.75h | 37.31 |
| 259 | 3.4.2.6.1.2 | Identify risks, show stopper(s) and update document | 0.6d | 2019-04-29 16:11 | 2019-04-30 10:11 | 258 | 0d | Sudhanshu Kulkarni [5%]; Apurv Khanna [5%]; Robert T. Murray [5%]; Susan Levy [5%]; Thomas V. Dugas [5%] | 0.75h | 15.9 |
| 260 | 3.4.2.6.1.3 | Develop/update progress report | 1d | 2019-04-30 10:11 | 2019-04-30 16:11 | 259 | 0d | Phillip Grome [5%]; Sudhanshu Kulkarni [5%] | 0.5h | 30.88 |
| 261 | 3.4.2.6.2 | **Weekly status meeting with Blue Prism Inc.** | 3.88d | 2019-04-30 16:11 | 2019-05-03 10:33 |  | 0d |  | 2h | 64.81 |
| 262 | 3.4.2.6.2.1 | Gather work progress and document | 0.38d | 2019-04-30 16:11 | 2019-05-01 09:03 | 260 | 0d | Apurv Khanna [10%]; Cynthia Wong [10%]; Sudhanshu Kulkarni [10%]; Thomas V. Dugas [10%] | 0.75h | 11.44 |
| 263 | 3.4.2.6.2.2 | Identify risks, show stopper(s) and update document | 1.5d | 2019-05-01 09:03 | 2019-05-02 08:33 | 262 | 0d | Apurv Khanna [5%]; Sudhanshu Kulkarni [5%] | 0.75h | 22.88 |
| 264 | 3.4.2.6.2.3 | Develop/update progress report | 2d | 2019-05-02 08:33 | 2019-05-03 10:33 | 263 | 0d | Sudhanshu Kulkarni [5%] | 0.5h | 30.5 |
| 265 | 3.4.2.6.3 | **Weekly status meeting with stakeholders** | 0.8d | 2019-05-03 10:33 | 2019-05-03 15:33 |  | 0d |  | 2h | 24.4 |
| 266 | 3.4.2.6.3.1 | Discuss project progress and share progress reports | 0.4d | 2019-05-03 10:33 | 2019-05-03 13:33 | 264 | 0d | Angela R. Berry [10%]; Javier Pareja [10%]; Piro Hernandez [10%]; Sudhanshu Kulkarni [10%]; Susan Levy [10%] | 1h | 12.2 |
| 267 | 3.4.2.6.3.2 | Present risk(s), show stopper(s) | 0.4d | 2019-05-03 13:33 | 2019-05-03 15:33 | 266 | 0d | Angela R. Berry [10%]; Javier Pareja [10%]; Piro Hernandez [10%]; Sudhanshu Kulkarni [10%]; Susan Levy [10%] | 1h | 12.2 |
| 268 | 3.4.2.7 | Technical supervision | 1d | 2019-04-23 09:41 | 2019-04-23 15:41 | 251 | 88.09d | Sudhanshu Kulkarni | 5h | 305 |
| 269 | 3.4.3 | **Sprint 3** | 13.95d | 2019-05-03 15:33 | 2019-05-16 13:18 |  | 0d |  | 183h | 7,690.83 |
| 270 | 3.4.3.1 | Create a backlog list of sprint 2 according to the user stories | 0.11d | 2019-05-03 15:33 | 2019-05-03 16:05 | 267 | 0d | Apurv Khanna [40%]; Cynthia Wong [40%]; James Sanduzi [40%]; Karen Watson [40%]; Robert T. Murray [40%]; Sudhanshu Kulkarni [40%]; Thomas V. Dugas [40%]; Phillip Grome | 2h | 74.89 |
| 271 | 3.4.3.2 | Enlist the tasks to be completed | 0.26d | 2019-05-03 16:05 | 2019-05-06 08:24 | 270 | 0d | Apurv Khanna [40%]; Cynthia Wong [40%]; James Sanduzi [40%]; Karen Watson [40%]; Robert T. Murray [40%]; Sudhanshu Kulkarni [40%]; Thomas V. Dugas [40%]; Phillip Grome | 5h | 187.22 |
| 272 | 3.4.3.3 | Develop a detailed design plan | 0.56d | 2019-05-06 08:24 | 2019-05-06 11:10 | 271 | 0d | Apurv Khanna; Cynthia Wong; James Sanduzi; Karen Watson; Robert T. Murray; Sudhanshu Kulkarni; Thomas V. Dugas; Mary Garcia; Stephanie Lewis | 25h | 829.17 |
| 273 | 3.4.3.4 | Programming for the tasks | 4.5d | 2019-05-06 11:10 | 2019-05-09 09:40 | 272 | 0d | Cynthia Wong; Mary Garcia; Phillip Grome; Robert T. Murray | 90h | 3,746.25 |
| 274 | 3.4.3.5 | Unit testing for the tasks | 2d | 2019-05-09 09:40 | 2019-05-10 11:40 | 273 | 0d | James Sanduzi; Karen Watson; Mary Garcia; Robert T. Murray; Stephanie Lewis | 50h | 2,375 |
| 275 | 3.4.3.6 | **Monitor progress of the project** | 6.53d | 2019-05-10 11:40 | 2019-05-16 13:18 |  | 0d |  | 6h | 173.3 |
| 276 | 3.4.3.6.1 | **Daily status meeting with World Hotels** | 1.85d | 2019-05-10 11:40 | 2019-05-13 13:55 |  | 0d |  | 2h | 84.09 |
| 277 | 3.4.3.6.1.1 | Gather work progress and document | 0.25d | 2019-05-10 11:40 | 2019-05-10 13:55 | 274 | 0d | James Sanduzi [10%]; Karen Watson [10%]; Mary Garcia [10%]; Robert T. Murray [10%]; Stephanie Lewis [10%]; Sudhanshu Kulkarni [10%] | 0.75h | 37.31 |
| 278 | 3.4.3.6.1.2 | Identify risks, show stopper(s) and update document | 0.6d | 2019-05-10 13:55 | 2019-05-10 16:55 | 277 | 0d | Sudhanshu Kulkarni [5%]; Apurv Khanna [5%]; Robert T. Murray [5%]; Susan Levy [5%]; Thomas V. Dugas [5%] | 0.75h | 15.9 |
| 279 | 3.4.3.6.1.3 | Develop/update progress report | 1d | 2019-05-10 16:55 | 2019-05-13 13:55 | 278 | 0d | Phillip Grome [5%]; Sudhanshu Kulkarni [5%] | 0.5h | 30.88 |

| ID | WBS | Task | Duration | Start | Finish | Predecessors | Total slack | Resources | Work | Cost |
| --- | --- | --- | --- | --- | --- | --- | --- | --- | --- | --- |
| 280 | 3.4.3.6.2 | **Weekly status meeting with Blue Prism Inc.** | 3.88d | 2019-05-13 13:55 | 2019-05-16 08:18 |  | 0d |  | 2h | 64.81 |
| 281 | 3.4.3.6.2.1 | Gather work progress and document | 0.38d | 2019-05-13 13:55 | 2019-05-13 15:48 | 279 | 0d | Apurv Khanna [10%]; Cynthia Wong [10%]; Sudhanshu Kulkarni [10%]; Thomas V. Dugas [10%] | 0.75h | 11.44 |
| 282 | 3.4.3.6.2.2 | Identify risks, show stopper(s) and update document | 1.5d | 2019-05-13 15:48 | 2019-05-14 15:18 | 281 | 0d | Apurv Khanna [5%]; Sudhanshu Kulkarni [5%] | 0.75h | 22.88 |
| 283 | 3.4.3.6.2.3 | Develop/update progress report | 2d | 2019-05-14 15:18 | 2019-05-16 08:18 | 282 | 0d | Sudhanshu Kulkarni [5%] | 0.5h | 30.5 |
| 284 | 3.4.3.6.3 | **Weekly status meeting with stakeholders** | 0.8d | 2019-05-16 08:18 | 2019-05-16 13:18 |  | 0d |  | 2h | 24.4 |
| 285 | 3.4.3.6.3.1 | Discuss project progress and share progress reports | 0.4d | 2019-05-16 08:18 | 2019-05-16 10:18 | 283 | 0d | Angela R. Berry [10%]; Javier Pareja [10%]; Piro Hernandez [10%]; Sudhanshu Kulkarni [10%]; Susan Levy [10%] | 1h | 12.2 |
| 286 | 3.4.3.6.3.2 | Present risk(s), show stopper(s) | 0.4d | 2019-05-16 10:18 | 2019-05-16 13:18 | 285 | 0d | Angela R. Berry [10%]; Javier Pareja [10%]; Piro Hernandez [10%]; Sudhanshu Kulkarni [10%]; Susan Levy [10%] | 1h | 12.2 |
| 287 | 3.4.3.7 | Technical supervision | 1d | 2019-05-03 16:05 | 2019-05-06 13:05 | 270 | 74.21d | Sudhanshu Kulkarni | 5h | 305 |
| 288 | 3.4.4 | **Sprint 4** | 13.92d | 2019-05-16 13:18 | 2019-05-30 09:53 |  | 0d |  | 183h | 7,716.72 |
| 289 | 3.4.4.1 | Create a backlog list of sprint 3 according to the user stories | 0.12d | 2019-05-16 13:18 | 2019-05-16 13:55 | 286 | 0d | Apurv Khanna [40%]; Cynthia Wong [40%]; James Sanduzi [40%]; Karen Watson [40%]; Robert T. Murray [40%]; Sudhanshu Kulkarni [40%]; Thomas V. Dugas [40%]; Phillip Grome [40%] | 2h | 65.5 |
| 290 | 3.4.4.2 | Enlist the tasks to be completed | 0.31d | 2019-05-16 13:55 | 2019-05-16 15:29 | 289 | 0d | Apurv Khanna [40%]; Cynthia Wong [40%]; James Sanduzi [40%]; Karen Watson [40%]; Robert T. Murray [40%]; Sudhanshu Kulkarni [40%]; Thomas V. Dugas [40%]; Phillip Grome [40%] | 5h | 163.75 |
| 291 | 3.4.4.3 | Develop a detailed design plan | 0.56d | 2019-05-16 15:29 | 2019-05-17 09:16 | 290 | 0d | Apurv Khanna; Cynthia Wong; James Sanduzi; Karen Watson; Robert T. Murray; Sudhanshu Kulkarni; Thomas V. Dugas; Mary Garcia; Stephanie Lewis | 25h | 829.17 |
| 292 | 3.4.4.4 | Programming for the tasks | 4d | 2019-05-17 09:16 | 2019-05-21 14:16 | 291 | 0d | Cynthia Wong; Mary Garcia; Phillip Grome; Robert T. Murray | 80h | 3,330 |
| 293 | 3.4.4.5 | Unit testing for the tasks | 2.4d | 2019-05-21 14:16 | 2019-05-23 09:16 | 292 | 0d | James Sanduzi; Karen Watson; Mary Garcia; Robert T. Murray; Stephanie Lewis | 60h | 2,850 |
| 294 | 3.4.4.6 | **Monitor progress of the project** | 6.53d | 2019-05-23 09:16 | 2019-05-30 09:53 |  | 0d |  | 6h | 173.3 |
| 295 | 3.4.4.6.1 | **Daily status meeting with World Hotels** | 1.85d | 2019-05-23 09:16 | 2019-05-24 10:31 |  | 0d |  | 2h | 84.09 |
| 296 | 3.4.4.6.1.1 | Gather work progress and document | 0.25d | 2019-05-23 09:16 | 2019-05-23 10:31 | 293 | 0d | James Sanduzi [10%]; Karen Watson [10%]; Mary Garcia [10%]; Robert T. Murray [10%]; Stephanie Lewis [10%]; Sudhanshu Kulkarni [10%] | 0.75h | 37.31 |
| 297 | 3.4.4.6.1.2 | Identify risks, show stopper(s) and update document | 0.6d | 2019-05-23 10:31 | 2019-05-23 14:31 | 296 | 0d | Sudhanshu Kulkarni [5%]; Apurv Khanna [5%]; Robert T. Murray [5%]; Susan Levy [5%]; Thomas V. Dugas [5%] | 0.75h | 15.9 |
| 298 | 3.4.4.6.1.3 | Develop/update progress report | 1d | 2019-05-23 14:31 | 2019-05-24 10:31 | 297 | 0d | Phillip Grome [5%]; Sudhanshu Kulkarni [5%] | 0.5h | 30.88 |
| 299 | 3.4.4.6.2 | **Weekly status meeting with Blue Prism Inc.** | 3.88d | 2019-05-24 10:31 | 2019-05-29 14:53 |  | 0d |  | 2h | 64.81 |
| 300 | 3.4.4.6.2.1 | Gather work progress and document | 0.38d | 2019-05-24 10:31 | 2019-05-24 13:23 | 298 | 0d | Apurv Khanna [10%]; Cynthia Wong [10%]; Sudhanshu Kulkarni [10%]; Thomas V. Dugas [10%] | 0.75h | 11.44 |
| 301 | 3.4.4.6.2.2 | Identify risks, show stopper(s) and update document | 1.5d | 2019-05-24 13:23 | 2019-05-28 11:53 | 300 | 0d | Apurv Khanna [5%]; Sudhanshu Kulkarni [5%] | 0.75h | 22.88 |
| 302 | 3.4.4.6.2.3 | Develop/update progress report | 2d | 2019-05-28 11:53 | 2019-05-29 14:53 | 301 | 0d | Sudhanshu Kulkarni [5%] | 0.5h | 30.5 |
| 303 | 3.4.4.6.3 | **Weekly status meeting with stakeholders** | 0.8d | 2019-05-29 14:53 | 2019-05-30 09:53 |  | 0d |  | 2h | 24.4 |
| 304 | 3.4.4.6.3.1 | Discuss project progress and share progress reports | 0.4d | 2019-05-29 14:53 | 2019-05-29 16:53 | 302 | 0d | Angela R. Berry [10%]; Javier Pareja [10%]; Piro Hernandez [10%]; Sudhanshu Kulkarni [10%]; Susan Levy [10%] | 1h | 12.2 |
| 305 | 3.4.4.6.3.2 | Present risk(s), show stopper(s) | 0.4d | 2019-05-29 16:53 | 2019-05-30 09:53 | 304 | 0d | Angela R. Berry [10%]; Javier Pareja [10%]; Piro Hernandez [10%]; Sudhanshu Kulkarni [10%]; Susan Levy [10%] | 1h | 12.2 |
| 306 | 3.4.4.7 | Technical supervision | 1d | 2019-05-16 13:55 | 2019-05-17 09:55 | 289 | 60.24d | Sudhanshu Kulkarni | 5h | 305 |

| ID | WBS | Task | Type | Duration | Start | Finish | Predecessors | Total slack | Resources | Work | Cost |
| --- | --- | --- | --- | --- | --- | --- | --- | --- | --- | --- | --- |
| 307 | 3.4.5 | **User training of room reservation module** |  | 1.05d | 2019-05-30 09:53 | 2019-05-30 16:08 |  | 0d |  | 10h | 260.4 |
| 308 | 3.4.5.1 | Develop a plan for user training |  | 0.25d | 2019-05-30 09:53 | 2019-05-30 11:08 | 305 | 0d | Apurv Khanna [40%]; Robert T. Murray [40%]; Sudhanshu Kulkarni [40%]; Thomas V. Dugas [40%] | 2h | 53 |
| 309 | 3.4.5.2 | Provide user training |  | 0.6d | 2019-05-30 11:08 | 2019-05-30 15:08 | 308 | 0d | Sudhanshu Kulkarni; Thomas V. Dugas | 6h | 183 |
| 310 | 3.4.5.3 | Get sign-off from users | milestone | 0.2d | 2019-05-30 15:08 | 2019-05-30 16:08 | 309 | 0d | Apurv Khanna [40%]; Javier Pareja [40%]; Piro Hernandez [40%]; Sudhanshu Kulkarni [40%]; Susan Levy [40%] | 2h | 24.4 |
| 311 | 3.4.6 | **Documentation** |  | 0.67d | 2019-05-30 16:08 | 2019-05-31 10:28 |  | 0d |  | 10h | 405 |
| 312 | 3.4.6.1 | Develop detailed level design document for the module |  | 0.67d | 2019-05-30 16:08 | 2019-05-31 10:28 | 310 | 0d | Cynthia Wong; Mary Garcia; Phillip Grome | 10h | 405 |
| 313 | 3.4.7 | **Sign-off with Stakeholders** |  | 0.25d | 2019-05-31 10:28 | 2019-05-31 11:43 |  | 0d |  | 3h | 30.5 |
| 314 | 3.4.7.1 | Present the module | milestone | 0.17d | 2019-05-31 10:28 | 2019-05-31 11:18 | 312 | 0d | Angela R. Berry [40%]; Javier Pareja [40%]; Nikki Platenik [40%]; Piro Hernandez [40%]; Sudhanshu Kulkarni [40%]; Susan Levy [40%] | 2h | 20.33 |
| 315 | 3.4.7.2 | Present detailed level design document | milestone | 0.08d | 2019-05-31 11:18 | 2019-05-31 11:43 | 314 | 0d | Angela R. Berry [40%]; Javier Pareja [40%]; Nikki Platenik [40%]; Piro Hernandez [40%]; Sudhanshu Kulkarni [40%]; Susan Levy [40%] | 1h | 10.17 |
| 316 | 3.4.8 | **Document Revision** |  | 0.25d | 2019-05-31 11:43 | 2019-05-31 13:58 |  | 0d |  | 5h | 228.13 |
| 317 | 3.4.8.1 | Revise all the necessary documents as per the project demands |  | 0.25d | 2019-05-31 11:43 | 2019-05-31 13:58 | 315 | 0d | Cynthia Wong; Mary Garcia; Phillip Grome; Sudhanshu Kulkarni | 5h | 228.13 |
| 318 | 3.5 | **Loyalty Points Systems Module** |  | 31.5d | 2019-05-31 13:58 | 2019-06-28 10:28 |  | 0d |  | 431.5h | 17,496.02 |
| 319 | 3.5.1 | **Sprint 1** |  | 13.84d | 2019-05-31 13:58 | 2019-06-13 10:10 |  | 0d |  | 190.5h | 8,147.3 |
| 320 | 3.5.1.1 | Enlist the tasks to be completed |  | 0.21d | 2019-05-31 13:58 | 2019-05-31 15:01 | 317 | 0d | Apurv Khanna [60%]; Cynthia Wong [60%]; James Sanduzi [60%]; Karen Watson [60%]; Robert T. Murray [60%]; Sudhanshu Kulkarni [60%]; Thomas V. Dugas [60%]; Mary Garcia [60%] | 5h | 161.56 |
| 321 | 3.5.1.2 | Develop a detailed design plan |  | 0.56d | 2019-05-31 15:01 | 2019-06-03 08:47 | 320 | 0d | Apurv Khanna; Cynthia Wong; James Sanduzi; Karen Watson; Robert T. Murray; Sudhanshu Kulkarni; Thomas V. Dugas; Mary Garcia; Stephanie Lewis | 25h | 829.17 |
| 322 | 3.5.1.3 | Programming for the tasks |  | 3.75d | 2019-06-03 08:47 | 2019-06-05 11:32 | 321 | 0d | Cynthia Wong; Mary Garcia; Phillip Grome; Robert T. Murray | 75h | 3,121.88 |
| 323 | 3.5.1.4 | Unit testing for the tasks |  | 3d | 2019-06-05 11:32 | 2019-06-07 10:32 | 322 | 0d | James Sanduzi; Karen Watson; Mary Garcia; Robert T. Murray; Stephanie Lewis | 75h | 3,562.5 |
| 324 | 3.5.1.5 | **Monitor progress of the project** |  | 6.33d | 2019-06-07 10:32 | 2019-06-13 10:10 |  | 0d |  | 5.5h | 167.2 |
| 325 | 3.5.1.5.1 | **Daily status meeting with World Hotels** |  | 1.85d | 2019-06-07 10:32 | 2019-06-10 11:47 |  | 0d |  | 2h | 84.09 |
| 326 | 3.5.1.5.1.1 | Gather work progress and document |  | 0.25d | 2019-06-07 10:32 | 2019-06-07 11:47 | 323 | 0d | James Sanduzi [10%]; Karen Watson [10%]; Mary Garcia [10%]; Robert T. Murray [10%]; Stephanie Lewis [10%]; Sudhanshu Kulkarni [10%] | 0.75h | 37.31 |
| 327 | 3.5.1.5.1.2 | Identify risks, show stopper(s) and update document |  | 0.6d | 2019-06-07 11:47 | 2019-06-07 15:47 | 326 | 0d | Sudhanshu Kulkarni [5%]; Apurv Khanna [5%]; Robert T. Murray [5%]; Susan Levy [5%]; Thomas V. Dugas [5%] | 0.75h | 15.9 |
| 328 | 3.5.1.5.1.3 | Develop/update progress report |  | 1d | 2019-06-07 15:47 | 2019-06-10 11:47 | 327 | 0d | Phillip Grome [5%]; Sudhanshu Kulkarni [5%] | 0.5h | 30.88 |
| 329 | 3.5.1.5.2 | **Weekly status meeting with Blue Prism Inc.** |  | 3.88d | 2019-06-10 11:47 | 2019-06-12 16:10 |  | 0d |  | 2h | 64.81 |
| 330 | 3.5.1.5.2.1 | Gather work progress and document |  | 0.38d | 2019-06-10 11:47 | 2019-06-10 14:40 | 328 | 0d | Apurv Khanna [10%]; Cynthia Wong [10%]; Sudhanshu Kulkarni [10%]; Thomas V. Dugas [10%] | 0.75h | 11.44 |
| 331 | 3.5.1.5.2.2 | Identify risks, show stopper(s) and update document |  | 1.5d | 2019-06-10 14:40 | 2019-06-11 14:10 | 330 | 0d | Apurv Khanna [5%]; Sudhanshu Kulkarni [5%] | 0.75h | 22.88 |
| 332 | 3.5.1.5.2.3 | Develop/update progress report |  | 2d | 2019-06-11 14:10 | 2019-06-12 16:10 | 331 | 0d | Sudhanshu Kulkarni [5%] | 0.5h | 30.5 |

| ID | WBS | Task | Type | Duration | Start | Finish | Predecessors | Total slack | Resources | Work | Cost |
| --- | --- | --- | --- | --- | --- | --- | --- | --- | --- | --- | --- |
| 333 | 3.5.1.5.3 | **Weekly status meeting with stakeholders** |  | 0.6d | 2019-06-12 16:10 | 2019-06-13 10:10 |  | 0d |  | 1.5h | 18.3 |
| 334 | 3.5.1.5.3.1 | Discuss project progress and share progress reports |  | 0.3d | 2019-06-12 16:10 | 2019-06-13 08:40 | 332 | 0d | Angela R. Berry [10%]; Javier Pareja [10%]; Piro Hernandez [10%]; Sudhanshu Kulkarni [10%]; Susan Levy [10%] | 0.75h | 9.15 |
| 335 | 3.5.1.5.3.2 | Present risk(s), show stopper(s) |  | 0.3d | 2019-06-13 08:40 | 2019-06-13 10:10 | 334 | 0d | Angela R. Berry [10%]; Javier Pareja [10%]; Piro Hernandez [10%]; Sudhanshu Kulkarni [10%]; Susan Levy [10%] | 0.75h | 9.15 |
| 336 | 3.5.1.6 | Technical supervision |  | 1d | 2019-05-31 15:01 | 2019-06-03 11:01 | 320 | 44.02d | Sudhanshu Kulkarni | 5h | 305 |
| 337 | 3.5.2 | **Sprint 2** |  | 13.78d | 2019-06-13 10:10 | 2019-06-25 16:03 |  | 0d |  | 193h | 8,221.35 |
| 338 | 3.5.2.1 | Create a backlog list of sprint 1 according to the user stories |  | 0.12d | 2019-06-13 10:10 | 2019-06-13 10:47 | 335 | 0d | Apurv Khanna [40%]; Cynthia Wong [40%]; James Sanduzi [40%]; Karen Watson [40%]; Robert T. Murray [40%]; Sudhanshu Kulkarni [40%]; Thomas V. Dugas [40%]; Mary Garcia [40%] | 2h | 64.62 |
| 339 | 3.5.2.2 | Enlist the tasks to be completed |  | 0.31d | 2019-06-13 10:47 | 2019-06-13 13:21 | 338 | 0d | Apurv Khanna [40%]; Cynthia Wong [40%]; James Sanduzi [40%]; Karen Watson [40%]; Robert T. Murray [40%]; Sudhanshu Kulkarni [40%]; Thomas V. Dugas [40%]; Mary Garcia [40%] | 5h | 161.56 |
| 340 | 3.5.2.3 | Develop a detailed design plan |  | 0.56d | 2019-06-13 13:21 | 2019-06-13 16:08 | 339 | 0d | Apurv Khanna; Cynthia Wong; James Sanduzi; Karen Watson; Robert T. Murray; Sudhanshu Kulkarni; Thomas V. Dugas; Mary Garcia; Stephanie Lewis | 25h | 829.17 |
| 341 | 3.5.2.4 | Programming for the tasks |  | 3.75d | 2019-06-13 16:08 | 2019-06-18 09:53 | 340 | 0d | Cynthia Wong; Mary Garcia; Phillip Grome; Robert T. Murray | 75h | 3,121.88 |
| 342 | 3.5.2.5 | Unit testing for the tasks |  | 3d | 2019-06-18 09:53 | 2019-06-20 08:53 | 341 | 0d | James Sanduzi; Karen Watson; Mary Garcia; Robert T. Murray; Stephanie Lewis | 75h | 3,562.5 |
| 343 | 3.5.2.6 | **Monitor progress of the project** |  | 6.03d | 2019-06-20 08:53 | 2019-06-25 16:03 |  | 0d |  | 6h | 176.62 |
| 344 | 3.5.2.6.1 | **Daily status meeting with World Hotels** |  | 1.73d | 2019-06-20 08:53 | 2019-06-21 09:33 |  | 0d |  | 2h | 91.22 |
| 345 | 3.5.2.6.1.1 | Gather work progress and document |  | 0.33d | 2019-06-20 08:53 | 2019-06-20 10:33 | 342 | 0d | James Sanduzi [10%]; Karen Watson [10%]; Mary Garcia [10%]; Robert T. Murray [10%]; Stephanie Lewis [10%]; Sudhanshu Kulkarni [10%] | 1h | 49.75 |
| 346 | 3.5.2.6.1.2 | Identify risks, show stopper(s) and update document |  | 0.4d | 2019-06-20 10:33 | 2019-06-20 13:33 | 345 | 0d | Sudhanshu Kulkarni [5%]; Apurv Khanna [5%]; Robert T. Murray [5%]; Susan Levy [5%]; Thomas V. Dugas [5%] | 0.5h | 10.6 |
| 347 | 3.5.2.6.1.3 | Develop/update progress report |  | 1d | 2019-06-20 13:33 | 2019-06-21 09:33 | 346 | 0d | Phillip Grome [5%]; Sudhanshu Kulkarni [5%] | 0.5h | 30.88 |
| 348 | 3.5.2.6.2 | **Weekly status meeting with Blue Prism Inc.** |  | 3.5d | 2019-06-21 09:33 | 2019-06-25 11:03 |  | 0d |  | 2h | 61 |
| 349 | 3.5.2.6.2.1 | Gather work progress and document |  | 0.5d | 2019-06-21 09:33 | 2019-06-21 13:03 | 347 | 0d | Apurv Khanna [10%]; Cynthia Wong [10%]; Sudhanshu Kulkarni [10%]; Thomas V. Dugas [10%] | 1h | 15.25 |
| 350 | 3.5.2.6.2.2 | Identify risks, show stopper(s) and update document |  | 1d | 2019-06-21 13:03 | 2019-06-24 09:03 | 349 | 0d | Apurv Khanna [5%]; Sudhanshu Kulkarni [5%] | 0.5h | 15.25 |
| 351 | 3.5.2.6.2.3 | Develop/update progress report |  | 2d | 2019-06-24 09:03 | 2019-06-25 11:03 | 350 | 0d | Sudhanshu Kulkarni [5%] | 0.5h | 30.5 |
| 352 | 3.5.2.6.3 | **Weekly status meeting with stakeholders** |  | 0.8d | 2019-06-25 11:03 | 2019-06-25 16:03 |  | 0d |  | 2h | 24.4 |
| 353 | 3.5.2.6.3.1 | Discuss project progress and share progress reports |  | 0.4d | 2019-06-25 11:03 | 2019-06-25 14:03 | 351 | 0d | Angela R. Berry [10%]; Javier Pareja [10%]; Piro Hernandez [10%]; Sudhanshu Kulkarni [10%]; Susan Levy [10%] | 1h | 12.2 |
| 354 | 3.5.2.6.3.2 | Present risk(s), show stopper(s) |  | 0.4d | 2019-06-25 14:03 | 2019-06-25 16:03 | 353 | 0d | Angela R. Berry [10%]; Javier Pareja [10%]; Piro Hernandez [10%]; Sudhanshu Kulkarni [10%]; Susan Levy [10%] | 1h | 12.2 |
| 355 | 3.5.2.7 | Technical supervision |  | 1d | 2019-06-13 10:47 | 2019-06-13 16:47 | 338 | 30.27d | Sudhanshu Kulkarni | 5h | 305 |
| 356 | 3.5.3 | **User training of loyalty points system module** |  | 1.05d | 2019-06-25 16:03 | 2019-06-26 13:18 |  | 0d |  | 10h | 260.4 |
| 357 | 3.5.3.1 | Develop a plan for user training |  | 0.25d | 2019-06-25 16:03 | 2019-06-26 08:18 | 354 | 0d | Apurv Khanna [40%]; Robert T. Murray [40%]; Sudhanshu Kulkarni [40%]; Thomas V. Dugas [40%] | 2h | 53 |
| 358 | 3.5.3.2 | Provide user training |  | 0.6d | 2019-06-26 08:18 | 2019-06-26 11:18 | 357 | 0d | Sudhanshu Kulkarni; Thomas V. Dugas | 6h | 183 |
| 359 | 3.5.3.3 | Get sign-off from users | milestone | 0.2d | 2019-06-26 11:18 | 2019-06-26 13:18 | 358 | 0d | Apurv Khanna [40%]; Javier Pareja [40%]; Piro Hernandez [40%]; Sudhanshu Kulkarni [40%]; Susan Levy [40%] | 2h | 24.4 |

| ID | WBS | Task | Type | Duration | Start | Finish | Predecessors | Total slack | Resources | Work | Cost |
| --- | --- | --- | --- | --- | --- | --- | --- | --- | --- | --- | --- |
| 360 | 3.5.4 | **Documentation** |  | 0.67d | 2019-06-26 13:18 | 2019-06-26 16:38 |  | 0d |  | 10h | 405 |
| 361 | 3.5.4.1 | Develop detailed level design document for the module |  | 0.67d | 2019-06-26 13:18 | 2019-06-26 16:38 | 359 | 0d | Cynthia Wong; Mary Garcia; Phillip Grome | 10h | 405 |
| 362 | 3.5.5 | **Sign-off with Stakeholders** |  | 1.92d | 2019-06-26 16:38 | 2019-06-28 09:13 |  | 0d |  | 23h | 233.83 |
| 363 | 3.5.5.1 | Present the module | milestone | 1.83d | 2019-06-26 16:38 | 2019-06-28 08:48 | 361 | 0d | Angela R. Berry [40%]; Javier Pareja [40%]; Nikki Platenik [40%]; Piro Hernandez [40%]; Sudhanshu Kulkarni [40%]; Susan Levy [40%] | 22h | 223.67 |
| 364 | 3.5.5.2 | Present detailed level design document | milestone | 0.08d | 2019-06-28 08:48 | 2019-06-28 09:13 | 363 | 0d | Angela R. Berry [40%]; Javier Pareja [40%]; Nikki Platenik [40%]; Piro Hernandez [40%]; Sudhanshu Kulkarni [40%]; Susan Levy [40%] | 1h | 10.17 |
| 365 | 3.5.6 | **Document Revision** |  | 0.25d | 2019-06-28 09:13 | 2019-06-28 10:28 |  | 0d |  | 5h | 228.13 |
| 366 | 3.5.6.1 | Revise all the necessary documents as per the project demands |  | 0.25d | 2019-06-28 09:13 | 2019-06-28 10:28 | 364 | 0d | Cynthia Wong; Mary Garcia; Phillip Grome; Sudhanshu Kulkarni | 5h | 228.13 |
| 367 | 4 | **Integration of all Modules** |  | 12.43d | 2019-06-28 10:28 | 2019-07-10 08:35 |  | 0d |  | 314h | 11,115.31 |
| 368 | 4.1 | Integrate all the modules as a system | milestone | 1d | 2019-06-28 10:28 | 2019-06-28 16:28 | 366 | 0d | Mary Garcia; Phillip Grome; Robert T. Murray; Sudhanshu Kulkarni; Thomas V. Dugas | 25h | 1,137.5 |
| 369 | 4.2 | **Documentation** |  | 0.8d | 2019-06-28 16:28 | 2019-07-01 11:28 |  | 0d |  | 20h | 560 |
| 370 | 4.2.1 | Develop a testing document for the integrated system |  | 0.8d | 2019-06-28 16:28 | 2019-07-01 11:28 | 368 | 0d | Cynthia Wong; Karen Watson; Phillip Grome; Stephanie Lewis; Thomas V. Dugas | 20h | 560 |
| 371 | 4.3 | **Documentation Sign-off** |  | 0.25d | 2019-07-01 11:28 | 2019-07-01 13:43 |  | 0d |  | 2h | 30.5 |
| 372 | 4.3.1 | Present the test case document | milestone | 0.25d | 2019-07-01 11:28 | 2019-07-01 13:43 | 370 | 0d | Javier Pareja [40%]; Piro Hernandez [40%]; Sudhanshu Kulkarni [40%]; Susan Levy [40%] | 2h | 30.5 |
| 373 | 4.4 | **Document Revision** |  | 0.25d | 2019-07-01 13:43 | 2019-07-01 14:58 |  | 0d |  | 5h | 198.75 |
| 374 | 4.4.1 | Revise all the necessary documents as per the project demands |  | 0.25d | 2019-07-01 13:43 | 2019-07-01 14:58 | 372 | 0d | Karen Watson; Mary Garcia; Phillip Grome; Thomas V. Dugas | 5h | 198.75 |
| 375 | 4.5 | **Testing** |  | 5.58d | 2019-07-01 14:58 | 2019-07-05 09:53 |  | 0d |  | 140h | 4,391.67 |
| 376 | 4.5.1 | Integration testing | milestone | 1.25d | 2019-07-01 14:58 | 2019-07-02 13:13 | 374 | 0d | Cynthia Wong; James Sanduzi; Karen Watson; Mary Garcia; Phillip Grome; Robert T. Murray; Stephanie Lewis; Thomas V. Dugas | 50h | 1,875 |
| 377 | 4.5.2 | User Acceptance Testiing | milestone | 3.33d | 2019-07-02 13:13 | 2019-07-04 13:53 | 376 | 0d | Apurv Khanna; Nikki Platenik; Sudhanshu Kulkarni | 50h | 1,016.67 |
| 378 | 4.5.3 | Simulation testing | milestone | 1d | 2019-07-04 13:53 | 2019-07-05 09:53 | 377 | 0d | Cynthia Wong; James Sanduzi; Karen Watson; Mary Garcia; Phillip Grome; Robert T. Murray; Stephanie Lewis; Thomas V. Dugas | 40h | 1,500 |
| 379 | 4.6 | **Documentation** |  | 1.75d | 2019-07-05 09:53 | 2019-07-08 10:38 |  | 0d |  | 45h | 1,715.62 |
| 380 | 4.6.1 | Update testing document as per the testing process |  | 0.5d | 2019-07-05 09:53 | 2019-07-05 13:23 | 378 | 0d | Cynthia Wong; James Sanduzi; Karen Watson; Mary Garcia; Phillip Grome; Robert T. Murray; Stephanie Lewis; Thomas V. Dugas | 20h | 750 |
| 381 | 4.6.2 | Develop final reports for closure |  | 1.25d | 2019-07-05 13:23 | 2019-07-08 10:38 | 380 | 0d | Cynthia Wong; James Sanduzi; Karen Watson; Sudhanshu Kulkarni | 25h | 965.62 |
| 382 | 4.7 | **Sign-off** |  | 0.17d | 2019-07-08 10:38 | 2019-07-08 11:28 |  | 0d |  | 2h | 20.33 |
| 383 | 4.7.1 | Testing sign-off | milestone | 0.17d | 2019-07-08 10:38 | 2019-07-08 11:28 | 381 | 0d | Angela R. Berry [40%]; Apurv Khanna [40%]; Javier Pareja [40%]; Piro Hernandez [40%]; Sudhanshu Kulkarni [40%]; Susan Levy [40%] | 2h | 20.33 |
| 384 | 4.8 | Production Implementation | milestone | 0.62d | 2019-07-08 11:28 | 2019-07-08 15:35 | 383 | 0d | Apurv Khanna; Cynthia Wong; James Sanduzi; Mary Garcia; Phillip Grome; Robert T. Murray; Sudhanshu Kulkarni; Thomas V. Dugas | 25h | 885.94 |
| 385 | 4.9 | Final Issue Resolution | milestone | 2d | 2019-07-08 15:35 | 2019-07-10 08:35 | 384 | 0d | Cynthia Wong; James Sanduzi; Mary Garcia; Phillip Grome; Stephanie Lewis | 50h | 2,175 |

| ID | WBS | Task | Type | Duration | Start | Finish | Predecessors | Total slack | Constraint | Resources | Work | Cost |
| --- | --- | --- | --- | --- | --- | --- | --- | --- | --- | --- | --- | --- |
| 386 | 5 | **Project Closure** |  | 1.31d | 2019-07-10 08:35 | 2019-07-10 16:08 |  | 0d |  |  | 9h | 238.19 |
| 387 | 5.1 | Draft a lessons and learnings document | milestone | 1d | 2019-07-10 08:35 | 2019-07-10 14:35 | 385 | 0d |  | Sudhanshu Kulkarni [60%] | 3h | 183 |
| 388 | 5.2 | Present all the required deliverables | milestone | 0.14d | 2019-07-10 14:35 | 2019-07-10 15:18 | 387 | 0d |  | Angela R. Berry [80%]; Apurv Khanna [80%]; Javier Pareja [80%]; Nikki Platenik [80%]; Piro Hernandez [80%]; Sudhanshu Kulkarni [80%]; Susan Levy [80%] | 4h | 34.86 |
| 389 | 5.3 | Get sign off on the project | milestone | 0.17d | 2019-07-10 15:18 | 2019-07-10 16:08 | 388 | 0d |  | Angela R. Berry [40%]; Javier Pareja [40%]; Nikki Platenik [40%]; Piro Hernandez [40%]; Sudhanshu Kulkarni [40%]; Susan Levy [40%] | 2h | 20.33 |
| 390 | 6 | **Payment** |  | 229.78d | 2018-12-15 10:00 | 2019-07-05 15:53 |  | 4.85d |  |  |  | 161,300 |
| 391 | 6.1 | Initial Payment | milestone | 1d | 2018-12-15 10:00 | 2018-12-15 16:00 |  | 233.63d | start no earlier than 2018-12-15 10:00 | Initial Payment |  | 17,500 |
| 392 | 6.2 | **Monthly license** |  | 169d | 2019-02-01 10:00 | 2019-07-01 16:00 |  | 11.23d |  |  |  | 13,800 |
| 393 | 6.2.1 | Monthly license 1 | milestone | 1d | 2019-02-01 10:00 | 2019-02-01 16:00 |  | 179.23d | start no earlier than 2019-02-01 10:00 | Monthly license fees |  | 2,300 |
| 394 | 6.2.2 | Monthly license 2 | milestone | 1d | 2019-03-01 10:00 | 2019-03-01 16:00 |  | 147.23d | start no earlier than 2019-03-01 10:00 | Monthly license fees |  | 2,300 |
| 395 | 6.2.3 | Monthly license 3 |  | 1d | 2019-04-01 10:00 | 2019-04-01 16:00 |  | 113.63d | start no earlier than 2019-04-01 10:00 | Monthly license fees |  | 2,300 |
| 396 | 6.2.4 | Monthly license 4 |  | 1d | 2019-05-01 10:00 | 2019-05-01 16:00 |  | 78.43d | start no earlier than 2019-05-01 10:00 | Monthly license fees |  | 2,300 |
| 397 | 6.2.5 | Monthly license 5 |  | 1d | 2019-06-03 08:00 | 2019-06-03 14:00 |  | 43.63d | start no earlier than 2019-06-01 10:00 | Monthly license fees |  | 2,300 |
| 398 | 6.2.6 | Monthly license 6 |  | 1d | 2019-07-01 10:00 | 2019-07-01 16:00 |  | 11.23d | start no earlier than 2019-07-01 10:00 | Monthly license fees |  | 2,300 |
| 399 | 6.3 | Integration testing fees | milestone | 1d | 2019-07-02 13:13 | 2019-07-03 09:13 | 376 | 9.18d |  | Integration test fees per module |  | 12,500 |
| 400 | 6.4 | **Training session fees** |  | 142.51d | 2019-02-21 08:45 | 2019-06-27 09:18 |  | 15.57d |  |  |  | 85,000 |
| 401 | 6.4.1 | Training session fees 1 | milestone | 1d | 2019-02-21 08:45 | 2019-02-21 14:45 | 125 | 157.08d |  | Training sessions |  | 17,000 |
| 402 | 6.4.2 | Training session fees 2 | milestone | 1d | 2019-03-19 16:04 | 2019-03-20 13:04 | 174 | 127.01d |  | Training sessions |  | 17,000 |
| 403 | 6.4.3 | Training session fees 3 | milestone | 1d | 2019-04-09 16:08 | 2019-04-10 13:08 | 223 | 103d |  | Training sessions |  | 17,000 |
| 404 | 6.4.4 | Training session fees 4 | milestone | 1d | 2019-05-30 16:08 | 2019-05-31 13:08 | 310 | 45.4d |  | Training sessions |  | 17,000 |
| 405 | 6.4.5 | Training session fees 5 | milestone | 1d | 2019-06-26 13:18 | 2019-06-27 09:18 | 359 | 15.57d |  | Training sessions |  | 17,000 |
| 406 | 6.5 | Simulation testing fees | milestone | 1d | 2019-07-05 09:53 | 2019-07-05 15:53 | 378 | 4.85d |  | Simulation test |  | 32,500 |
